# AOMs

Schedule from MS Project, 2014-07-01 to 2016-01-05, status date 2011-04-11, costs in S..
Cronograma GDTSTG
INSI - SUNAT

## Calendars

- Estándar: Mon-Fri 09:00-13:00, 15:00-19:00; Sat-Sun off.

## Resources

| Resource | Group | Rate |
| --- | --- | --- |
| Atalaya Peña Walter Alfredo | 2A5400 - Div. Mod. Sist Trib. Adm Y Ges | 1 |
| Estrada Sanchez Jose Evaristo | 2A5400 - Div. Mod. Sist Trib. Adm Y Ges | 1 |
| Arpi Tafur Andrea Avelina | 2A5400 - Div. Mod. Sist Trib. Adm Y Ges | 1 |
| Navarro Price Carlos Enrique | 2A5400 - Div. Mod. Sist Trib. Adm Y Ges | 1 |
| Osorio Llerena Juan Jose | 2A5600 - Div. Certificac Calidad Softw | 1 |
| Rojas Oscanoa Leo Percy | 2A5400 - Div. Mod. Sist Trib. Adm Y Ges | 1 |
| Manrique Escudero Richard Daniel | 2A5400 - Div. Mod. Sist Trib. Adm Y Ges | 1 |
| Caballero Ortiz José | 2A5400 - Div. Mod. Sist Trib. Adm Y Ges | 1 |
| Rondo Gutierrez Gerardo Benigno | 2A5400 - Div. Mod. Sist Trib. Adm Y Ges | 1 |
| Silva Valverde Joanna Leyla | 2A5400 - Div. Mod. Sist Trib. Adm Y Ges | 1 |
| Huamán Camayo María del Rosario |  | 1 |
| Narda Bautista Reyes |  | 1 |
| GAS |  | 1 |
| DDSA |  | 1 |
| dsnt |  | 1 |
| DDSA |  | 1 |
| Soto Rodriguez Luis |  | 1 |
| Marroquin Bellido Emiliano |  | 1 |
| Febres Zapata Flor |  | 1 |
| Salazar Guardia Luis |  | 1 |
| Yaya Espinoza Silvia |  | 1 |
| Noriega Apolinario Adrian |  | 1 |
| Canchucaja Vilchez Juan José |  | 1 |
| INTA |  | 1 |
| Montes Carrera Ricardo Humberto |  | 1 |
| FSW |  | 1 |
| INSI - DDSA |  | 1 |
| INSI - GAS |  | 1 |
| INSI - DCSA |  | 1 |
| INSI - DSNT |  | 1 |
| INTA - DPS |  | 1 |
| Sonia Argumedo |  | 1 |
| FSW |  | 1 |
| INSI - DDSAD |  | 1 |
| INSI - DDST |  | 1 |
| INSI - pases |  | 1 |
| INPCFA-DGRA |  | 1 |
| Arana Cappeleti Reinhard |  | 1 |
| Eliezer Rodriguez |  | 1 |
| DCCSA |  | 1 |
| Normativa |  | 1 |
| I_AN_Syaya |  | 1 |
| I_AN_Ffebres |  | 1 |
| Operaciones |  | 1 |
| I_AN_Anoriega |  | 1 |
| I_AC_Oparedes |  | 1 |
| I_AS_Fsalas |  | 1 |
| L_Huamancaja |  | 1 |
| J_Estrada |  | 1 |
| I_AS_Binocente |  | 1 |
| I_AM_Nramirez |  | 1 |
| I_AN_Emarroquin |  | 1 |
| DSNT/DDSA |  | 1 |
| I_Jrenteria |  | 1 |
| INSI - DMSA |  | 1 |
| rmb |  | 1 |
| anoriega |  | 1 |
| SERPOST |  | 1 |
| jcanchucaja |  | 1 |
| I_AS_1 |  | 1 |
| SERPOST |  | 1 |
| INSI - DCCSA |  | 1 |
| I_Sup_Hcastillo |  | 1 |
| I_AS_Rmartinez |  | 1 |
| I_AS_Gbecerra |  | 1 |
| I_Arq_DDAIA |  | 1 |
| I_AC_1 |  | 1 |
| I_User_CPacora |  | 1 |
| I_AS_Egonzales |  | 1 |
| I_AS_Ecaña |  | 1 |
| I_Pr_DDSA |  | 1 |
| I_AP_Jsarmiento |  | 1 |
| I_AP_Jpeñafiel |  | 1 |
| dccsti |  | 1 |
| paes |  | 1 |
| BN |  | 1 |
| ANA;BN |  | 1 |
| DDSTI |  | 1 |
| Sierra Balcazar Juan Augusto |  | 1 |
| Chumpitaz Santivañez Luis Alberto |  | 1 |
| Cuba Castillo Carola Lizeth |  | 1 |
| Pizarro Ramirez Marco Antonio |  | 1 |
| Huallanca Viteri Roman Jarpaikamayoc |  | 1 |
| Gonzales Vasquez Diego Alexis |  | 1 |
| INSI - DCCSA |  | 1 |
| INSI - GOSU |  | 1 |
| INSI - DCCSA |  | 1 |
| ccc |  | 1 |
| inpcfa |  | 1 |
| INSI - DCSAD |  | 1 |
| INSI-DSNT |  | 1 |
| Usuarios |  | 1 |
| Usuario |  | 1 |
| INSI-DCCSA |  | 1 |
| INSI |  | 1 |
| INSI - GSU |  | 1 |
| INSI-pases |  | 1 |
| DCCSTA |  | 1 |
| INSI - DCSTA |  | 1 |
| INSI-DDSA |  | 1 |
| NMM |  | 1 |
| sye |  | 1 |
| gdsa |  | 1 |
| gds |  | 1 |
| Consultor |  | 1 |
| LRC |  | 1 |
| sunat |  | 1 |
| I_AS_DSNT |  | 1 |
| I_AS_DDSA |  | 1 |
| DSNA |  | 1 |
| I_AP_DDSA |  | 1 |
| I_AP_DDSA_2 |  | 1 |
| I_AP_DDSA_3 |  | 1 |
| I_AS_DSNT |  | 1 |
| I_AS_DDSA |  | 1 |
| A_DDSA_01 |  | 1 |
| A_DDSA_02 |  | 1 |
| P_DDSA_01 |  | 1 |
| P_DDSA_02 |  | 1 |
| DSNA |  | 1 |
| I_Arq_DDAIA |  | 1 |
| I_AP_DDSA |  | 1 |
| I_AP_DDSA_2 |  | 1 |
| I_AP_DDSA_3 |  | 1 |
| I_AC_DDSA |  | 1 |
| I_AC_DCCSA |  | 1 |
| A_DDSA_01 |  | 1 |
| A_DDSA_02 |  | 1 |
| P_DDSA_01 |  | 1 |
| P_DDSA_02 |  | 1 |

## Schedule

| ID | WBS | Task | Duration | Start | Finish | Predecessors | Total slack | Free slack | Constraint | Work | Cost | Baseline cost |
| --- | --- | --- | --- | --- | --- | --- | --- | --- | --- | --- | --- | --- |
| 1 | 1 | **DSNT** | 396d | 2014-07-01 | 2016-01-05 |  | 0d |  |  | 7520h | 7,520 | 999,999,999,999.99 |
| 2 | 1.1 | **PROYECTOS** | 396d | 2014-07-01 | 2016-01-05 |  | 0d |  |  | 7520h | 7,520 |  |
| 3 | 1.1.1 | **P_DSNT_0003_Ad_MejorasComplementarias NPDA-EER-SINI parte 2** | 396d | 2014-07-01 | 2016-01-05 |  | 0d |  |  | 7520h | 7,520 |  |
| 4 | 1.1.1.1 | **Sistema de Selección No Intrusiva SINI** | 262d | 2015-01-05 | 2016-01-05 |  | 0d |  |  | 3816h | 3,816 |  |
| 5 | 1.1.1.1.1 | **Modelamiento de Requerimiento del Sistema de Información** | 187d | 2015-01-05 | 2015-09-22 |  | 0d |  |  |  |  |  |
| 6 | 1.1.1.1.1.1 | Acompañamiento en el modelamiento de negocio | 5d | 2015-01-05 | 2015-01-09 |  | 0d |  | start no earlier than 2015-01-05 |  |  |  |
| 7 | 1.1.1.1.1.2 | Revisión y ajustes de RINs | 3d | 2015-01-12 | 2015-01-14 | 6 | 0d |  |  |  |  |  |
| 8 | 1.1.1.1.1.3 | Elaboración ASI0 | 3d | 2015-01-15 | 2015-01-19 | 7 | 0d |  |  |  |  |  |
| 9 | 1.1.1.1.1.4 | Estimación de Esfuerzo | 1d | 2015-01-20 | 2015-01-20 | 8 | 0d |  |  |  |  |  |
| 10 | 1.1.1.1.1.5 | **RIN10 - Control de Contenedores en el Complejo de la IAMC** | 4d | 2015-01-21 | 2015-01-26 |  | 0d |  |  |  |  |  |
| 11 | 1.1.1.1.1.5.1 | **Modelamiento de Requerimientos - F2 ASI1** | 2d | 2015-01-21 | 2015-01-22 |  | 0d |  |  |  |  |  |
| 12 | 1.1.1.1.1.5.1.1 | Elaborar F2 ASI1 - RF06: Reporte de Contenedores Ingresados a SINI | 2d | 2015-01-21 | 2015-01-22 | 9 | 0d |  |  |  |  |  |
| 13 | 1.1.1.1.1.5.2 | Validación F2-ASI1 con GDSA | 1d | 2015-01-23 | 2015-01-23 | 12 | 0d |  |  |  |  |  |
| 14 | 1.1.1.1.1.5.3 | Validación F2-ASI1 con normativa | 1d | 2015-01-26 | 2015-01-26 | 13 | 0d |  |  |  |  |  |
| 15 | 1.1.1.1.1.6 | **RIN03 - Adecuaciones al sistema de selección para seleccionar contenedores a inspección no intrusiva** | 171d | 2015-01-27 | 2015-09-22 |  | 0d |  |  |  |  |  |
| 16 | 1.1.1.1.1.6.1 | **Modelamiento de Requerimientos - F2 ASI1** | 14d | 2015-01-27 | 2015-02-13 |  | 0d |  |  |  |  |  |
| 17 | 1.1.1.1.1.6.1.1 | **RF 04 / 08 - Adecuaciones al Intérprete del Sistema de Selección SIGAD** | 14d | 2015-01-27 | 2015-02-13 |  | 0d |  |  |  |  |  |
| 18 | 1.1.1.1.1.6.1.1.1 | Elaborar F2 ASI1 - Módulo Teledespacho Regimenes (Reg 10) | 3d | 2015-01-27 | 2015-01-29 | 14 | 0d |  |  |  |  |  |
| 19 | 1.1.1.1.1.6.1.1.2 | Elaborar F2 ASI1 - Módulo Teledespacho Regimenes (Reg 20) | 4d | 2015-01-30 | 2015-02-04 | 18 | 0d |  |  |  |  |  |
| 20 | 1.1.1.1.1.6.1.1.3 | Elaborar F2 ASI1 - Módulo Teledespacho Regimenes (Reg 21) | 4d | 2015-02-05 | 2015-02-10 | 19 | 0d |  | start no earlier than 2014-02-04 |  |  |  |
| 21 | 1.1.1.1.1.6.1.1.4 | Elaborar F2 ASI1 - Módulo Teledespacho Regimenes (Reg 70) | 3d | 2015-02-11 | 2015-02-13 | 20 | 0d |  |  |  |  |  |
| 22 | 1.1.1.1.1.6.2 | Validación F2-ASI1 con GDSA | 1d | 2015-02-16 | 2015-02-16 | 21 | 0d |  |  |  |  |  |
| 23 | 1.1.1.1.1.6.3 | Validación F2-ASI1 con normativa | 2d | 2015-02-17 | 2015-02-18 | 22 | 0d |  |  |  |  |  |
| 24 | 1.1.1.1.1.6.4 | RF 01 - Elaborar F2 ASI1: Adecuaciones al Módulo de Gestión de Perfiles de Riesgo en el SIGAD, para el registro de Perfiles. | 3d | 2015-08-26 | 2015-08-28 | 148, 23 | 67d | 0d |  |  |  |  |
| 25 | 1.1.1.1.1.6.5 | RF 02 - Elaborar F2 ASI1: Adecuaciones al Módulo de Gestión de Perfiles de Riesgo en el SIGAD, para el registro de Perfiles con la función SUBSTR. | 2d | 2015-08-31 | 2015-09-01 | 24 | 67d | 0d |  |  |  |  |
| 26 | 1.1.1.1.1.6.6 | RF 03 - Elaborar F2 ASI1: Adecuar el Módulo de Gestión de Perfiles para el registro de perfiles en los regímenes 20 y 21 el registro de perfiles | 3d | 2015-09-02 | 2015-09-04 | 25 | 67d | 0d |  |  |  |  |
| 27 | 1.1.1.1.1.6.7 | RF 05 - Elaborar F2 ASI1: Adecuar el Módulo de Gestión de Perfiles para el registro de perfiles con la tabla DOCCONTSINI | 2d | 2015-09-07 | 2015-09-08 | 26 | 67d | 0d |  |  |  |  |
| 28 | 1.1.1.1.1.6.8 | RF 06 - Elaborar F2 ASI1: Adecuar la tabla RSO de representantes legales de RUC de INFORMIX para el registro de perfiles en el SIGAD | 3d | 2015-09-09 | 2015-09-11 | 27 | 67d | 0d |  |  |  |  |
| 29 | 1.1.1.1.1.6.9 | RF 07 - Elaborar F2 ASI1: Adecuar la tabla RSO de representantes legales de RUC de INFORMIX para el registro de perfiles en el SDA | 2d | 2015-09-14 | 2015-09-15 | 28 | 67d | 0d |  |  |  |  |
| 30 | 1.1.1.1.1.6.10 | RF 09 - Adecuaciones al Intérprete del Sistema de Selección SDA | 2d | 2015-09-16 | 2015-09-17 | 29 | 67d | 0d |  |  |  |  |
| 31 | 1.1.1.1.1.6.11 | RF 10 - Adecuaciones al Simulador del Sistema de Selección en el SIGAD | 3d | 2015-09-18 | 2015-09-22 | 30 | 67d | 0d |  |  |  |  |

| ID | WBS | Task | Duration | Start | Finish | Predecessors | Total slack | Free slack | Constraint | Resources | Work | Cost |
| --- | --- | --- | --- | --- | --- | --- | --- | --- | --- | --- | --- | --- |
| 32 | 1.1.1.1.1.7 | **RIN11 - Obtener indicadores de control de tiempos del proceso de control en el complejo de la IAMC** | 17d | 2015-02-19 | 2015-03-13 |  | 40d |  |  |  |  |  |
| 33 | 1.1.1.1.1.7.1 | **Modelamiento de Requerimientos - F2 ASI1** | 13d | 2015-02-19 | 2015-03-09 |  | 40d |  |  |  |  |  |
| 34 | 1.1.1.1.1.7.1.1 | RF01 - Elaborar F2 ASI1: Adecuación en las opciones de Registro de la Selección de Contenedores a SINI | 2d | 2015-02-19 | 2015-02-20 | 23 | 40d | 0d |  |  |  |  |
| 35 | 1.1.1.1.1.7.1.2 | RF02 - Elaborar F2 ASI1: Opción de Consulta de Indicadores de Tiempo en el Complejo de la IAMC | 4d | 2015-02-23 | 2015-02-26 | 34 | 40d | 0d |  |  |  |  |
| 36 | 1.1.1.1.1.7.1.3 | RF03 - Elaborar F2 ASI1: Opción de Consulta de Indicadores de Gestión en el Complejo de la IAMC | 5d | 2015-02-27 | 2015-03-05 | 35 | 40d | 0d |  |  |  |  |
| 37 | 1.1.1.1.1.7.1.4 | Elaborar F2 ASI1 - RF04: Reporte de Contenedores seleccionados no presentados al complejo | 2d | 2015-03-06 | 2015-03-09 | 36 | 40d | 0d |  |  |  |  |
| 38 | 1.1.1.1.1.7.2 | Validación F2-ASI1 con GDSA | 2d | 2015-03-10 | 2015-03-11 | 37 | 40d | 0d |  |  |  |  |
| 39 | 1.1.1.1.1.7.3 | Validación F2-ASI1 con normativa | 2d | 2015-03-12 | 2015-03-13 | 38 | 40d |  |  |  |  |  |
| 40 | 1.1.1.1.2 | **Analisis y diseño del sistema de información** | 156d | 2015-02-19 | 2015-09-24 |  | 0d |  |  |  | 1072h | 1,072 |
| 41 | 1.1.1.1.2.1 | Explicación F2 RIN-003 Teledespacho Regímenes | 2d | 2015-02-19 | 2015-02-20 | 23 | 0d |  |  | I_AS_DSNT; I_AS_DDSA | 32h | 32 |
| 42 | 1.1.1.1.2.2 | **RIN-003 Teledespacho Regímenes** | 154d | 2015-02-23 | 2015-09-24 |  | 0d |  |  |  | 496h | 496 |
| 43 | 1.1.1.1.2.2.1 | Registro de Perfiles de Riesgo (Reg. 10, 70, 20 y 21) | 1d | 2015-02-23 | 2015-02-23 | 23, 41 | 0d |  | start no earlier than 2014-01-03 | DSNA | 8h | 8 |
| 44 | 1.1.1.1.2.2.2 | **Teledespacho Regímenes** | 46d | 2015-02-24 | 2015-04-28 |  | 0d |  |  |  | 368h | 368 |
| 45 | 1.1.1.1.2.2.2.1 | **Régimen 10** | 4d | 2015-02-24 | 2015-02-27 |  | 0d |  |  |  | 32h | 32 |
| 46 | 1.1.1.1.2.2.2.1.1 | No considerar Filtro SINI para asignar canal | 2d | 2015-02-24 | 2015-02-25 | 43 | 0d |  |  | I_AS_DDSA | 16h | 16 |
| 47 | 1.1.1.1.2.2.2.1.2 | Enviar la alerta | 2d | 2015-02-26 | 2015-02-27 | 46 | 0d |  |  | I_AS_DDSA | 16h | 16 |
| 48 | 1.1.1.1.2.2.2.2 | **Régimen 70** | 4d | 2015-03-02 | 2015-03-05 |  | 0d |  |  |  | 32h | 32 |
| 49 | 1.1.1.1.2.2.2.2.1 | No considerar Filtro SINI para asignar canal | 2d | 2015-03-02 | 2015-03-03 | 47 | 0d |  |  | I_AS_DDSA | 16h | 16 |
| 50 | 1.1.1.1.2.2.2.2.2 | Enviar la alerta | 2d | 2015-03-04 | 2015-03-05 | 49 | 0d |  |  | I_AS_DDSA | 16h | 16 |
| 51 | 1.1.1.1.2.2.2.3 | **Régimen 20** | 19d | 2015-03-06 | 2015-04-01 |  | 0d |  |  |  | 152h | 152 |
| 52 | 1.1.1.1.2.2.2.3.1 | Implementar FMV | 10d | 2015-03-06 | 2015-03-19 | 50 | 0d |  |  | I_AS_DDSA | 80h | 80 |
| 53 | 1.1.1.1.2.2.2.3.2 | Desactivar FiltroPlano | 5d | 2015-03-20 | 2015-03-26 | 52 | 0d |  |  | I_AS_DDSA | 40h | 40 |
| 54 | 1.1.1.1.2.2.2.3.3 | No considerar Filtro SINI para asignar canal | 2d | 2015-03-27 | 2015-03-30 | 53 | 0d |  |  | I_AS_DDSA | 16h | 16 |
| 55 | 1.1.1.1.2.2.2.3.4 | Enviar la alerta | 2d | 2015-03-31 | 2015-04-01 | 54 | 0d |  |  | I_AS_DDSA | 16h | 16 |

| ID | WBS | Task | Duration | Start | Finish | Predecessors | Total slack | Free slack | Resources | Work | Cost |
| --- | --- | --- | --- | --- | --- | --- | --- | --- | --- | --- | --- |
| 56 | 1.1.1.1.2.2.2.4 | **Régimen 21** | 19d | 2015-04-02 | 2015-04-28 |  | 0d |  |  | 152h | 152 |
| 57 | 1.1.1.1.2.2.2.4.1 | Implementar FMV | 10d | 2015-04-02 | 2015-04-15 | 55 | 0d |  | I_AS_DDSA | 80h | 80 |
| 58 | 1.1.1.1.2.2.2.4.2 | Desactiva FiltroPlano | 5d | 2015-04-16 | 2015-04-22 | 57 | 0d |  | I_AS_DDSA | 40h | 40 |
| 59 | 1.1.1.1.2.2.2.4.3 | No considerar Filtro SINI para asignar canal | 2d | 2015-04-23 | 2015-04-24 | 58 | 0d |  | I_AS_DDSA | 16h | 16 |
| 60 | 1.1.1.1.2.2.2.4.4 | Enviar la alerta | 2d | 2015-04-27 | 2015-04-28 | 59 | 0d |  | I_AS_DDSA | 16h | 16 |
| 61 | 1.1.1.1.2.2.3 | RF 01 - Adecuaciones al Módulo de Gestión de Perfiles de Riesgo en el SIGAD, para el registro de Perfiles. | 2d | 2015-08-31 | 2015-09-01 | 24 | 84d | 0d | DSNA | 16h | 16 |
| 62 | 1.1.1.1.2.2.4 | RF 02 - Adecuaciones al Módulo de Gestión de Perfiles de Riesgo en el SIGAD, para el registro de Perfiles con la función SUBSTR. | 1d | 2015-09-02 | 2015-09-02 | 25 | 85d | 0d | DSNA | 8h | 8 |
| 63 | 1.1.1.1.2.2.5 | RF 03 - Adecuar el Módulo de Gestión de Perfiles para el registro de perfiles en los regímenes 20 y 21 el registro de perfiles | 3d | 2015-09-07 | 2015-09-09 | 26 | 78d | 0d | DSNA | 24h | 24 |
| 64 | 1.1.1.1.2.2.6 | RF 05 - Adecuar el Módulo de Gestión de Perfiles para el registro de perfiles con la tabla DOCCONTSINI | 1d | 2015-09-09 | 2015-09-09 | 27 | 80d | 0d | DSNA | 8h | 8 |
| 65 | 1.1.1.1.2.2.7 | RF 06 - Adecuar la tabla RSO de representantes legales de RUC de INFORMIX para el registro de perfiles en el SIGAD | 2d | 2015-09-14 | 2015-09-15 | 28 | 74d | 0d | DSNA | 16h | 16 |
| 66 | 1.1.1.1.2.2.8 | RF 07 - Adecuar la tabla RSO de representantes legales de RUC de INFORMIX para el registro de perfiles en el SDA | 2d | 2015-09-16 | 2015-09-17 | 29 | 74d | 0d | DSNA | 16h | 16 |
| 67 | 1.1.1.1.2.2.9 | RF 09 - Adecuaciones al Intérprete del Sistema de Selección SDA | 2d | 2015-09-18 | 2015-09-21 | 30 | 70d | 0d | DSNA | 16h | 16 |
| 68 | 1.1.1.1.2.2.10 | RF 10 - Adecuaciones al Simulador del Sistema de Selección en el SIGAD | 2d | 2015-09-23 | 2015-09-24 | 31 | 67d | 0d | DSNA | 16h | 16 |
| 69 | 1.1.1.1.2.3 | **RIN-010 Control de Proceso SINI** | 8d | 2015-04-29 | 2015-05-08 |  | 0d |  |  | 64h | 64 |
| 70 | 1.1.1.1.2.3.1 | Reporte de Contenedores ingresados a SINI | 8d | 2015-04-29 | 2015-05-08 | 60, 14 | 0d |  | I_AS_DDSA | 64h | 64 |
| 71 | 1.1.1.1.2.4 | **RIN-011 Indicadores de Control de Tiempo SINI** | 60d | 2015-05-11 | 2015-07-31 |  | 0d |  |  | 480h | 480 |
| 72 | 1.1.1.1.2.4.1 | **RF01-Ingreso de motivos en el registro de Selección SINI** | 10d | 2015-05-11 | 2015-05-22 |  | 0d |  |  | 80h | 80 |
| 73 | 1.1.1.1.2.4.1.1 | Opción: Con Destinación | 2d | 2015-05-11 | 2015-05-12 | 70, 39 | 0d |  | I_AS_DDSA | 16h | 16 |
| 74 | 1.1.1.1.2.4.1.2 | Opción: Sin Destinación | 2d | 2015-05-13 | 2015-05-14 | 73 | 0d |  | I_AS_DDSA | 16h | 16 |
| 75 | 1.1.1.1.2.4.1.3 | Actualización modelo conceptual | 2d | 2015-05-15 | 2015-05-18 | 74 | 0d |  | I_AS_DDSA | 16h | 16 |
| 76 | 1.1.1.1.2.4.1.4 | Revisión y aprobación DDAT modelo conceptual | 2d | 2015-05-19 | 2015-05-20 | 75 | 0d |  | I_Arq_DDAIA | 16h | 16 |
| 77 | 1.1.1.1.2.4.1.5 | Actualización modelo físico de datos | 2d | 2015-05-21 | 2015-05-22 | 76 | 0d |  | I_AS_DDSA | 16h | 16 |
| 78 | 1.1.1.1.2.4.2 | **RF02-Consulta de indicadores de tiempo** | 20d | 2015-05-25 | 2015-06-19 |  | 0d |  |  | 160h | 160 |
| 79 | 1.1.1.1.2.4.2.1 | Consulta con diversos parámetros y en base a ellos te devuelven 8 distintos reportes | 20d | 2015-05-25 | 2015-06-19 | 77 | 0d |  | I_AS_DDSA | 160h | 160 |

| ID | WBS | Task | Duration | Start | Finish | Predecessors | Total slack | Free slack | Resources | Work | Cost |
| --- | --- | --- | --- | --- | --- | --- | --- | --- | --- | --- | --- |
| 80 | 1.1.1.1.2.4.3 | **RF03-Consulta de indicadores de gestión** | 20d | 2015-06-22 | 2015-07-17 |  | 0d |  |  | 160h | 160 |
| 81 | 1.1.1.1.2.4.3.1 | Consulta con diversos parámetros, muestra 3 tipos de reporte (Acumulado, Detallado, Analista) | 20d | 2015-06-22 | 2015-07-17 | 79 | 0d |  | I_AS_DDSA | 160h | 160 |
| 82 | 1.1.1.1.2.4.4 | **RF04-Reporte de contenedores SINI** | 10d | 2015-07-20 | 2015-07-31 |  | 0d |  |  | 80h | 80 |
| 83 | 1.1.1.1.2.4.4.1 | Consulta con diversos parámetros | 10d | 2015-07-20 | 2015-07-31 | 81 | 0d |  | I_AS_DDSA | 80h | 80 |
| 84 | 1.1.1.1.3 | **Construcción** | 152d | 2015-03-02 | 2015-09-29 |  | 7d |  |  | 1688h | 1,688 |
| 85 | 1.1.1.1.3.1 | Explicación F2 RIN-003 Teledespacho Regímenes | 1d | 2015-03-02 | 2015-03-02 | 47 | 7d | 0d | I_AP_DDSA; I_AS_DDSA | 16h | 16 |
| 86 | 1.1.1.1.3.2 | **RIN-003 Teledespacho Regímenes** | 151d | 2015-03-03 | 2015-09-29 |  | 7d |  |  | 808h | 808 |
| 87 | 1.1.1.1.3.2.1 | **Teledespacho Regímenes** | 80d | 2015-03-03 | 2015-06-22 |  | 7d |  |  | 640h | 640 |
| 88 | 1.1.1.1.3.2.1.1 | **Régimen 10** | 8d | 2015-03-03 | 2015-03-12 |  | 7d |  |  | 64h | 64 |
| 89 | 1.1.1.1.3.2.1.1.1 | No considerar Filtro SINI para asignar canal | 4d | 2015-03-03 | 2015-03-06 | 85 | 7d | 0d | I_AP_DDSA | 32h | 32 |
| 90 | 1.1.1.1.3.2.1.1.2 | Enviar la alerta | 4d | 2015-03-09 | 2015-03-12 | 89 | 7d | 0d | I_AP_DDSA | 32h | 32 |
| 91 | 1.1.1.1.3.2.1.2 | **Régimen 70** | 8d | 2015-03-13 | 2015-03-24 |  | 7d |  |  | 64h | 64 |
| 92 | 1.1.1.1.3.2.1.2.1 | No considerar Filtro SINI para asignar canal | 4d | 2015-03-13 | 2015-03-18 | 90 | 7d | 0d | I_AP_DDSA | 32h | 32 |
| 93 | 1.1.1.1.3.2.1.2.2 | Enviar la alerta | 4d | 2015-03-19 | 2015-03-24 | 92 | 7d | 0d | I_AP_DDSA | 32h | 32 |
| 94 | 1.1.1.1.3.2.1.3 | **Régimen 20** | 30d | 2015-03-25 | 2015-05-05 |  | 7d |  |  | 240h | 240 |
| 95 | 1.1.1.1.3.2.1.3.1 | Implementar FMV | 15d | 2015-03-25 | 2015-04-14 | 93 | 7d | 0d | I_AP_DDSA | 120h | 120 |
| 96 | 1.1.1.1.3.2.1.3.2 | Desactivar FiltroPlano | 7d | 2015-04-15 | 2015-04-23 | 95 | 7d | 0d | I_AP_DDSA | 56h | 56 |
| 97 | 1.1.1.1.3.2.1.3.3 | No considerar Filtro SINI para asignar canal | 4d | 2015-04-24 | 2015-04-29 | 96 | 7d | 0d | I_AP_DDSA | 32h | 32 |
| 98 | 1.1.1.1.3.2.1.3.4 | Enviar la alerta | 4d | 2015-04-30 | 2015-05-05 | 97 | 7d | 0d | I_AP_DDSA | 32h | 32 |
| 99 | 1.1.1.1.3.2.1.4 | **Régimen 21** | 30d | 2015-05-06 | 2015-06-16 |  | 7d |  |  | 240h | 240 |
| 100 | 1.1.1.1.3.2.1.4.1 | Implementar FMV | 15d | 2015-05-06 | 2015-05-26 | 98 | 7d | 0d | I_AP_DDSA | 120h | 120 |
| 101 | 1.1.1.1.3.2.1.4.2 | Desactiva FiltroPlano | 7d | 2015-05-27 | 2015-06-04 | 100 | 7d | 0d | I_AP_DDSA | 56h | 56 |
| 102 | 1.1.1.1.3.2.1.4.3 | No considerar Filtro SINI para asignar canal | 4d | 2015-06-05 | 2015-06-10 | 101 | 7d | 0d | I_AP_DDSA | 32h | 32 |
| 103 | 1.1.1.1.3.2.1.4.4 | Enviar la alerta | 4d | 2015-06-11 | 2015-06-16 | 102 | 7d | 0d | I_AP_DDSA | 32h | 32 |
| 104 | 1.1.1.1.3.2.1.5 | Integración de código fuente con última versión en producción | 1d | 2015-06-17 | 2015-06-17 | 103 | 7d | 0d | I_AP_DDSA | 8h | 8 |
| 105 | 1.1.1.1.3.2.1.6 | Pruebas de desarrollo | 2d | 2015-06-18 | 2015-06-19 | 104 | 7d | 0d | I_AP_DDSA | 16h | 16 |
| 106 | 1.1.1.1.3.2.1.7 | Generación de Pase y Documentación Asociada | 1d | 2015-06-22 | 2015-06-22 | 105 | 7d | 0d | I_AP_DDSA | 8h | 8 |
| 107 | 1.1.1.1.3.2.2 | RF 01 - Adecuaciones al Módulo de Gestión de Perfiles de Riesgo en el SIGAD, para el registro de Perfiles. | 3d | 2015-09-02 | 2015-09-04 | 61 | 84d | 0d | DSNA | 24h | 24 |
| 108 | 1.1.1.1.3.2.3 | RF 02 - Adecuaciones al Módulo de Gestión de Perfiles de Riesgo en el SIGAD, para el registro de Perfiles con la función SUBSTR. | 2d | 2015-09-03 | 2015-09-04 | 62 | 85d | 0d | DSNA | 16h | 16 |
| 109 | 1.1.1.1.3.2.4 | RF 03 - Adecuar el Módulo de Gestión de Perfiles para el registro de perfiles en los regímenes 20 y 21 el registro de perfiles | 3d | 2015-09-10 | 2015-09-14 | 63 | 78d | 0d | DSNA | 24h | 24 |
| 110 | 1.1.1.1.3.2.5 | RF 05 - Adecuar el Módulo de Gestión de Perfiles para el registro de perfiles con la tabla DOCCONTSINI | 2d | 2015-09-10 | 2015-09-11 | 64 | 80d | 0d | DSNA | 16h | 16 |
| 111 | 1.1.1.1.3.2.6 | RF 06 - Adecuar la tabla RSO de representantes legales de RUC de INFORMIX para el registro de perfiles en el SIGAD | 3d | 2015-09-16 | 2015-09-18 | 65 | 74d | 0d | DSNA | 24h | 24 |
| 112 | 1.1.1.1.3.2.7 | RF 07 - Adecuar la tabla RSO de representantes legales de RUC de INFORMIX para el registro de perfiles en el SDA | 2d | 2015-09-18 | 2015-09-21 | 66 | 74d | 0d | DSNA | 16h | 16 |
| 113 | 1.1.1.1.3.2.8 | RF 09 - Adecuaciones al Intérprete del Sistema de Selección SDA | 3d | 2015-09-22 | 2015-09-24 | 67 | 70d | 0d | DSNA | 24h | 24 |
| 114 | 1.1.1.1.3.2.9 | RF 10 - Adecuaciones al Simulador del Sistema de Selección en el SIGAD | 3d | 2015-09-25 | 2015-09-29 | 68 | 67d | 0d | DSNA | 24h | 24 |

| ID | WBS | Task | Duration | Start | Finish | Predecessors | Total slack | Free slack | Resources | Work | Cost |
| --- | --- | --- | --- | --- | --- | --- | --- | --- | --- | --- | --- |
| 115 | 1.1.1.1.3.3 | **RIN-010 Control de Proceso SINI** | 15d | 2015-05-11 | 2015-05-29 |  | 121d |  |  | 120h | 120 |
| 116 | 1.1.1.1.3.3.1 | Reporte de Contenedores ingresados a SINI | 15d | 2015-05-11 | 2015-05-29 | 70 | 121d | 0d | I_AP_DDSA_2 | 120h | 120 |
| 117 | 1.1.1.1.3.4 | **RIN-011 Indicadores de Control de Tiempo SINI** | 65d | 2015-06-01 | 2015-08-28 |  | 45d |  |  | 648h | 648 |
| 118 | 1.1.1.1.3.4.1 | **RF01-Ingreso de motivos en el registro de Selección SINI** | 6d | 2015-06-01 | 2015-06-08 |  | 121d |  |  | 48h | 48 |
| 119 | 1.1.1.1.3.4.1.1 | Opción: Con Destinación | 3d | 2015-06-01 | 2015-06-03 | 77, 116 | 121d | 0d | I_AP_DDSA_2 | 24h | 24 |
| 120 | 1.1.1.1.3.4.1.2 | Opción: Sin Destinación | 3d | 2015-06-04 | 2015-06-08 | 119 | 121d | 29d | I_AP_DDSA_2 | 24h | 24 |
| 121 | 1.1.1.1.3.4.2 | **RF02-Consulta de indicadores de tiempo** | 30d | 2015-06-23 | 2015-08-03 |  | 111d |  |  | 240h | 240 |
| 122 | 1.1.1.1.3.4.2.1 | Consulta con diversos parámetros y en base a ellos te devuelven 8 distintos reportes | 30d | 2015-06-23 | 2015-08-03 | 79, 106 | 111d |  | I_AP_DDSA | 240h | 240 |
| 123 | 1.1.1.1.3.4.3 | **RF03-Consulta de indicadores de gestión** | 30d | 2015-07-20 | 2015-08-28 |  | 92d |  |  | 240h | 240 |
| 124 | 1.1.1.1.3.4.3.1 | Consulta con diversos parámetros, muestra 3 tipos de reporte (Acumulado, Detallado, Analista) | 30d | 2015-07-20 | 2015-08-28 | 81, 120 | 92d |  | I_AP_DDSA_2 | 240h | 240 |
| 125 | 1.1.1.1.3.4.4 | **RF04-Reporte de contenedores SINI** | 15d | 2015-08-03 | 2015-08-21 |  | 0d |  |  | 120h | 120 |
| 126 | 1.1.1.1.3.4.4.1 | Consulta con diversos parámetros | 15d | 2015-08-03 | 2015-08-21 | 83 | 0d |  | I_AP_DDSA_3 | 120h | 120 |
| 127 | 1.1.1.1.3.5 | Integración de código fuente con última versión en producción | 2d | 2015-08-24 | 2015-08-25 | 126 | 0d |  | I_AP_DDSA_2 | 16h | 16 |
| 128 | 1.1.1.1.3.6 | Revisión de estándares de construcción | 1d | 2015-08-26 | 2015-08-26 | 127 | 0d |  | I_AP_DDSA_2 | 8h | 8 |
| 129 | 1.1.1.1.3.7 | Pruebas de desarrollo en ambiente integrador | 5d | 2015-08-27 | 2015-09-02 | 128 | 0d |  | I_AP_DDSA_2 | 40h | 40 |
| 130 | 1.1.1.1.3.8 | Generación de Pase y Documentación Asociada | 1d | 2015-09-03 | 2015-09-03 | 129 | 0d |  | I_AP_DDSA_2 | 8h | 8 |
| 131 | 1.1.1.1.3.9 | Actualización Manual de Usuario | 3d | 2015-09-04 | 2015-09-08 | 130 | 85d |  | I_AP_DDSA_2 | 24h | 24 |
| 132 | 1.1.1.1.4 | **Pruebas del Sistema** | 110d | 2015-06-23 | 2015-11-23 |  | 7d |  |  | 1056h | 1,056 |
| 133 | 1.1.1.1.4.1 | **RIN-003 Teledespacho Regímenes** | 74d | 2015-06-23 | 2015-10-02 |  | 7d |  |  | 568h | 568 |
| 134 | 1.1.1.1.4.1.1 | **Teledespacho Regímenes** | 46d | 2015-06-23 | 2015-08-25 |  | 7d |  |  | 400h | 400 |
| 135 | 1.1.1.1.4.1.1.1 | **Régimen 10** | 5d | 2015-06-23 | 2015-06-29 |  | 7d |  |  | 40h | 40 |
| 136 | 1.1.1.1.4.1.1.1.1 | Elaboración de casos de prueba | 1d | 2015-06-23 | 2015-06-23 | 106 | 7d | 0d | I_AC_DCCSA | 8h | 8 |
| 137 | 1.1.1.1.4.1.1.1.2 | Ejecución de casos de prueba | 4d | 2015-06-24 | 2015-06-29 | 136 | 7d | 0d | I_AC_DCCSA | 32h | 32 |
| 138 | 1.1.1.1.4.1.1.2 | **Régimen 70** | 5d | 2015-06-30 | 2015-07-06 |  | 7d |  |  | 40h | 40 |
| 139 | 1.1.1.1.4.1.1.2.1 | Elaboración de casos de prueba | 1d | 2015-06-30 | 2015-06-30 | 137 | 7d | 0d | I_AC_DCCSA | 8h | 8 |
| 140 | 1.1.1.1.4.1.1.2.2 | Ejecución de casos de prueba | 4d | 2015-07-01 | 2015-07-06 | 139 | 7d | 0d | I_AC_DCCSA | 32h | 32 |

| ID | WBS | Task | Duration | Start | Finish | Predecessors | Total slack | Free slack | Resources | Work | Cost |
| --- | --- | --- | --- | --- | --- | --- | --- | --- | --- | --- | --- |
| 141 | 1.1.1.1.4.1.1.3 | **Régimen 20** | 16d | 2015-07-07 | 2015-07-28 |  | 7d |  |  | 128h | 128 |
| 142 | 1.1.1.1.4.1.1.3.1 | Elaboración de casos de prueba | 1d | 2015-07-07 | 2015-07-07 | 140 | 7d | 0d | I_AC_DCCSA | 8h | 8 |
| 143 | 1.1.1.1.4.1.1.3.2 | Ejecución de casos de prueba | 15d | 2015-07-08 | 2015-07-28 | 142 | 7d | 0d | I_AC_DCCSA | 120h | 120 |
| 144 | 1.1.1.1.4.1.1.4 | **Régimen 21** | 16d | 2015-07-29 | 2015-08-19 |  | 7d |  |  | 128h | 128 |
| 145 | 1.1.1.1.4.1.1.4.1 | Elaboración de casos de prueba | 1d | 2015-07-29 | 2015-07-29 | 143 | 7d | 0d | I_AC_DCCSA | 8h | 8 |
| 146 | 1.1.1.1.4.1.1.4.2 | Ejecución de casos de prueba | 15d | 2015-07-30 | 2015-08-19 | 145 | 7d | 0d | I_AC_DCCSA | 120h | 120 |
| 147 | 1.1.1.1.4.1.1.5 | Pruebas de Aceptación (Conformidad normativa) | 2d | 2015-08-20 | 2015-08-21 | 146 | 97d |  | I_AC_DCCSA; INTA | 32h | 32 |
| 148 | 1.1.1.1.4.1.1.6 | Elaboración de documentos de calidad (Informe de Pruebas) | 4d | 2015-08-20 | 2015-08-25 | 146 | 7d | 0d | I_AC_DCCSA | 32h | 32 |
| 149 | 1.1.1.1.4.1.2 | RF 01 - Adecuaciones al Módulo de Gestión de Perfiles de Riesgo en el SIGAD, para el registro de Perfiles. | 3d | 2015-09-07 | 2015-09-09 | 107 | 84d |  | DSNA | 24h | 24 |
| 150 | 1.1.1.1.4.1.3 | RF 02 - Adecuaciones al Módulo de Gestión de Perfiles de Riesgo en el SIGAD, para el registro de Perfiles con la función SUBSTR. | 2d | 2015-09-07 | 2015-09-08 | 108 | 85d |  | DSNA | 16h | 16 |
| 151 | 1.1.1.1.4.1.4 | RF 03 - Adecuar el Módulo de Gestión de Perfiles para el registro de perfiles en los regímenes 20 y 21 el registro de perfiles | 3d | 2015-09-15 | 2015-09-17 | 109 | 78d |  | DSNA | 24h | 24 |
| 152 | 1.1.1.1.4.1.5 | RF 05 - Adecuar el Módulo de Gestión de Perfiles para el registro de perfiles con la tabla DOCCONTSINI | 2d | 2015-09-14 | 2015-09-15 | 110 | 80d |  | DSNA | 16h | 16 |
| 153 | 1.1.1.1.4.1.6 | RF 06 - Adecuar la tabla RSO de representantes legales de RUC de INFORMIX para el registro de perfiles en el SIGAD | 3d | 2015-09-21 | 2015-09-23 | 111 | 74d |  | DSNA | 24h | 24 |
| 154 | 1.1.1.1.4.1.7 | RF 07 - Adecuar la tabla RSO de representantes legales de RUC de INFORMIX para el registro de perfiles en el SDA | 2d | 2015-09-22 | 2015-09-23 | 112 | 74d |  | DSNA | 16h | 16 |
| 155 | 1.1.1.1.4.1.8 | RF 09 - Adecuaciones al Intérprete del Sistema de Selección SDA | 3d | 2015-09-25 | 2015-09-29 | 113 | 70d |  | DSNA | 24h | 24 |
| 156 | 1.1.1.1.4.1.9 | RF 10 - Adecuaciones al Simulador del Sistema de Selección en el SIGAD | 3d | 2015-09-30 | 2015-10-02 | 114 | 67d |  | DSNA | 24h | 24 |
| 157 | 1.1.1.1.4.2 | **RIN-010 y RIN-011 - Control de Proceso SINI** | 57d | 2015-09-04 | 2015-11-23 |  | 0d |  |  | 488h | 488 |
| 158 | 1.1.1.1.4.2.1 | Configuración de Ambiente de Pruebas | 1d | 2015-09-04 | 2015-09-04 | 148, 130 | 0d |  | I_AC_DCCSA | 8h | 8 |
| 159 | 1.1.1.1.4.2.2 | **Reporte de Contenedores ingresados a SINI (RF 06)** | 8d | 2015-09-07 | 2015-09-16 |  | 0d |  |  | 64h | 64 |
| 160 | 1.1.1.1.4.2.2.1 | Elaboración de casos de prueba | 1d | 2015-09-07 | 2015-09-07 | 158 | 0d |  | I_AC_DCCSA | 8h | 8 |
| 161 | 1.1.1.1.4.2.2.2 | Ejecución de casos de prueba | 7d | 2015-09-08 | 2015-09-16 | 160 | 0d |  | I_AC_DCCSA | 56h | 56 |
| 162 | 1.1.1.1.4.2.3 | **RF01-Ingreso de motivos en el registro de Selección SINI** | 4d | 2015-09-17 | 2015-09-22 |  | 0d |  |  | 32h | 32 |
| 163 | 1.1.1.1.4.2.3.1 | Elaboración de casos de prueba | 1d | 2015-09-17 | 2015-09-17 | 161 | 0d |  | I_AC_DCCSA | 8h | 8 |
| 164 | 1.1.1.1.4.2.3.2 | Ejecución de casos de prueba | 3d | 2015-09-18 | 2015-09-22 | 163 | 0d |  | I_AC_DCCSA | 24h | 24 |

| ID | WBS | Task | Duration | Start | Finish | Predecessors | Total slack | Free slack | Constraint | Resources | Work | Cost |
| --- | --- | --- | --- | --- | --- | --- | --- | --- | --- | --- | --- | --- |
| 165 | 1.1.1.1.4.2.4 | **RF02-Consulta de indicadores de tiempo** | 16d | 2015-09-23 | 2015-10-14 |  | 0d |  |  |  | 128h | 128 |
| 166 | 1.1.1.1.4.2.4.1 | Elaboración de casos de prueba | 1d | 2015-09-23 | 2015-09-23 | 164 | 0d |  |  | I_AC_DCCSA | 8h | 8 |
| 167 | 1.1.1.1.4.2.4.2 | Ejecución de casos de prueba | 15d | 2015-09-24 | 2015-10-14 | 166 | 0d |  |  | I_AC_DCCSA | 120h | 120 |
| 168 | 1.1.1.1.4.2.5 | **RF03-Consulta de indicadores de gestión** | 16d | 2015-10-15 | 2015-11-05 |  | 0d |  |  |  | 128h | 128 |
| 169 | 1.1.1.1.4.2.5.1 | Elaboración de casos de prueba | 1d | 2015-10-15 | 2015-10-15 | 167 | 0d |  |  | I_AC_DCCSA | 8h | 8 |
| 170 | 1.1.1.1.4.2.5.2 | Ejecución de casos de prueba | 15d | 2015-10-16 | 2015-11-05 | 169 | 0d |  |  | I_AC_DCCSA | 120h | 120 |
| 171 | 1.1.1.1.4.2.6 | **RF04-Reporte de contenedores SINI** | 8d | 2015-11-06 | 2015-11-17 |  | 0d |  |  |  | 64h | 64 |
| 172 | 1.1.1.1.4.2.6.1 | Elaboración de casos de prueba | 1d | 2015-11-06 | 2015-11-06 | 170 | 0d |  |  | I_AC_DCCSA | 8h | 8 |
| 173 | 1.1.1.1.4.2.6.2 | Ejecución de casos de prueba | 7d | 2015-11-09 | 2015-11-17 | 172 | 0d |  |  | I_AC_DCCSA | 56h | 56 |
| 174 | 1.1.1.1.4.2.7 | Pruebas de Aceptación (Conformidad normativa) | 2d | 2015-11-18 | 2015-11-19 | 173 | 33d |  |  | I_AC_DCCSA; INTA | 32h | 32 |
| 175 | 1.1.1.1.4.2.8 | Elaboración de documentos de calidad (Informe de Pruebas) | 4d | 2015-11-18 | 2015-11-23 | 173 | 0d |  |  | I_AC_DCCSA | 32h | 32 |
| 176 | 1.1.1.1.5 | **Implantación** | 65d | 2015-08-26 | 2015-11-24 |  | 30d |  |  |  |  |  |
| 177 | 1.1.1.1.5.1 | Instalación Pase Teledespacho | 1d | 2015-08-26 | 2015-08-26 | 148 | 94d |  |  |  |  |  |
| 178 | 1.1.1.1.5.2 | Instalación Pase SINI | 1d | 2015-11-24 | 2015-11-24 | 175 | 0d |  |  |  |  |  |
| 179 | 1.1.1.1.6 | **Estabilización** | 30d | 2015-11-25 | 2016-01-05 |  | 0d |  |  |  |  |  |
| 180 | 1.1.1.1.6.1 | Monitoreo y atención de incidencias/problemas | 30d | 2015-11-25 | 2016-01-05 | 178 | 0d |  |  |  |  |  |
| 181 | 1.1.1.2 | **Sistema de Envíos de Entrega Rápida - EER** | 367d | 2014-07-01 | 2015-11-25 |  | 29d |  |  |  | 3704h | 3,704 |
| 182 | 1.1.1.2.1 | **Modelamiento de Requerimiento del Sistema de Información** | 96d | 2014-07-01 | 2014-11-11 |  | 29d |  |  |  |  |  |
| 183 | 1.1.1.2.1.1 | Acompañamiento en el modelamiento de negocio | 10d | 2014-07-01 | 2014-07-14 |  | 29d | 0d | start no earlier than 2014-07-01 |  |  |  |
| 184 | 1.1.1.2.1.2 | Revisión y ajustes de RINs | 5d | 2014-07-15 | 2014-07-21 | 183 | 29d | 0d |  |  |  |  |
| 185 | 1.1.1.2.1.3 | Elaboración ASI0 | 5d | 2014-07-22 | 2014-07-28 | 184 | 29d | 0d |  |  |  |  |
| 186 | 1.1.1.2.1.4 | Estimación de Esfuerzo | 1d | 2014-07-29 | 2014-07-29 | 185 | 29d | 0d |  |  |  |  |
| 187 | 1.1.1.2.1.5 | **RIN01 - Transmisión del manifiesto EER que contiene guías de tipo 3 (Diplomático) SALIDA** | 19d | 2014-07-30 | 2014-08-25 |  | 29d |  |  |  |  |  |
| 188 | 1.1.1.2.1.5.1 | **Modelamiento de Requerimientos - F2 ASI1** | 17d | 2014-07-30 | 2014-08-21 |  | 29d |  |  |  |  |  |
| 189 | 1.1.1.2.1.5.1.1 | **RF 01 - Numeración del Manifiesto Provisional (Teledepacho de manfiestos y Módulo de Manifiestos)** | 4d | 2014-07-30 | 2014-08-04 |  | 29d |  |  |  |  |  |
| 190 | 1.1.1.2.1.5.1.1.1 | Elaborar F2 ASI1 - Teledespacho Manifiestos (EER) | 2d | 2014-07-30 | 2014-07-31 | 186 | 29d | 0d |  |  |  |  |
| 191 | 1.1.1.2.1.5.1.1.2 | Elaborar F2 ASI1 - Módulo de Manifiestos | 2d | 2014-08-01 | 2014-08-04 | 190 | 29d | 0d |  |  |  |  |
| 192 | 1.1.1.2.1.5.1.2 | RF02 - Elaborar F2 ASI1: Numeración del Manifiesto-Declaración (Teledespacho de manifiestos) | 2d | 2014-08-05 | 2014-08-06 | 191 | 29d | 0d | start no earlier than 2014-05-19 |  |  |  |
| 193 | 1.1.1.2.1.5.1.3 | RF03 - Elaborar F2 ASI1: Numeración de la DS EER Individual posterior al manifiesto (Teledespacho Regimenes) | 2d | 2014-08-07 | 2014-08-08 | 192 | 29d | 0d |  |  |  |  |

| ID | WBS | Task | Duration | Start | Finish | Predecessors | Total slack | Free slack | Constraint |
| --- | --- | --- | --- | --- | --- | --- | --- | --- | --- |
| 194 | 1.1.1.2.1.5.1.4 | **RF04 - Numeración del manifiesto definitivo con envíos de valija diplomática (condición de carga 3)** | 5d | 2014-08-11 | 2014-08-15 |  | 29d |  |  |
| 195 | 1.1.1.2.1.5.1.4.1 | Elaborar F2 ASI1 - Teledespacho Manifiestos (EER) | 2d | 2014-08-11 | 2014-08-12 | 193 | 29d | 0d | start no earlier than 2014-05-22 |
| 196 | 1.1.1.2.1.5.1.4.2 | Elaborar F2 ASI1 - Módulo de Manifiestos | 3d | 2014-08-13 | 2014-08-15 | 195 | 29d | 0d | start no earlier than 2014-05-23 |
| 197 | 1.1.1.2.1.5.1.5 | **RF05 - Rectificación del Manifiesto Provisional (Teledepacho de manfiestos y Módulo de Manifiestos)** | 4d | 2014-08-18 | 2014-08-21 |  | 29d |  |  |
| 198 | 1.1.1.2.1.5.1.5.1 | Elaborar F2 ASI1 - Teledespacho Manifiestos (EER) | 2d | 2014-08-18 | 2014-08-19 | 196 | 29d | 0d | start no earlier than 2013-12-18 |
| 199 | 1.1.1.2.1.5.1.5.2 | Elaborar F2 ASI1 - Módulo de Manifiestos | 2d | 2014-08-20 | 2014-08-21 | 198 | 29d | 0d | start no earlier than 2013-12-18 |
| 200 | 1.1.1.2.1.5.2 | Validación F2-ASI1 con GDSA | 1d | 2014-08-22 | 2014-08-22 | 199 | 29d | 0d | start no earlier than 2014-06-05 |
| 201 | 1.1.1.2.1.5.3 | Validación F2-ASI1 con normativa | 1d | 2014-08-25 | 2014-08-25 | 200 | 29d | 0d | start no earlier than 2014-06-05 |
| 202 | 1.1.1.2.1.6 | **RIN02 - Declaración Simplificada de Donación asociada a GUIA EER - INGRESO** | 15d | 2014-08-26 | 2014-09-15 |  | 29d |  |  |
| 203 | 1.1.1.2.1.6.1 | **Modelamiento de Requerimientos - F2 ASI1** | 13d | 2014-08-26 | 2014-09-11 |  | 29d |  |  |
| 204 | 1.1.1.2.1.6.1.1 | RF01 - Elaborar F2 ASI1: Donaciones impugnadas sin garantías asociada a una GUIA EER (Teledespacho Regimenes EER) | 2d | 2014-08-26 | 2014-08-27 | 201 | 29d | 0d | start no earlier than 2013-12-19 |
| 205 | 1.1.1.2.1.6.1.2 | RF02 - Elaborar F2 ASI1: Donaciones impugnadas sin garantías asociada a una GUIA EER por módulo DSI (Módulo DS EER Ingreso) | 3d | 2014-08-28 | 2014-09-01 | 204 | 29d | 0d | start no earlier than 2013-12-19 |
| 206 | 1.1.1.2.1.6.1.3 | **RF03 - Rectificación de los datos del manifiesto EER de una DSI** | 5d | 2014-09-02 | 2014-09-08 |  | 29d |  |  |
| 207 | 1.1.1.2.1.6.1.3.1 | Elaborar F2 ASI1 - Teledespacho Regimenes (EER) | 2d | 2014-09-02 | 2014-09-03 | 205 | 29d | 0d | start no earlier than 2013-12-19 |
| 208 | 1.1.1.2.1.6.1.3.2 | Elaborar F2 ASI1 - Módulo DS EER Ingreso | 3d | 2014-09-04 | 2014-09-08 | 207 | 29d | 0d | start no earlier than 2013-12-19 |
| 209 | 1.1.1.2.1.6.1.4 | RF04 - Elaborar F2 ASI1: Rectificación de los datos del manifiesto EER en el registro de la diligencia de una DSI (Módulo DS EER Ingreso) | 3d | 2014-09-09 | 2014-09-11 | 208 | 29d | 0d | start no earlier than 2013-12-19 |
| 210 | 1.1.1.2.1.6.2 | Validación F2-ASI1 con GDSA | 1d | 2014-09-12 | 2014-09-12 | 209 | 29d | 0d | start no earlier than 2013-12-19 |
| 211 | 1.1.1.2.1.6.3 | Validación F2-ASI1 con normativa | 1d | 2014-09-15 | 2014-09-15 | 210 | 29d | 0d | start no earlier than 2013-12-19 |
| 212 | 1.1.1.2.1.7 | **RIN03 - CONSULTAS Y REPORTES DE LA DS EER SALIDA** | 14d | 2014-09-16 | 2014-10-03 |  | 29d |  |  |
| 213 | 1.1.1.2.1.7.1 | **Modelamiento de Requerimientos - F2 ASI1 - CONSULTAS Y REPORTES DE LA DS EER SALIDA** | 4d | 2014-09-16 | 2014-09-19 |  | 29d |  |  |
| 214 | 1.1.1.2.1.7.1.1 | RF01 - Elaborar F2 ASI1: Consultas de la DS EER Salida con Solicitud de Rectificación (Módulo DS EER Salida) | 2d | 2014-09-16 | 2014-09-17 | 211 | 29d | 0d | start no earlier than 2013-12-19 |
| 215 | 1.1.1.2.1.7.1.2 | RF02 - Elaborar F2 ASI1: Consulta de DS EER Individuales y/o Consolidadas en el Portal SUNAT | 2d | 2014-09-18 | 2014-09-19 | 214 | 29d | 0d |  |
| 216 | 1.1.1.2.1.7.2 | Validación F2-ASI1 con GDSA | 1d | 2014-09-22 | 2014-09-22 | 215 | 29d | 0d |  |
| 217 | 1.1.1.2.1.7.3 | Validación F2-ASI1 con normativa | 1d | 2014-09-23 | 2014-09-23 | 216 | 29d | 0d |  |

| ID | WBS | Task | Duration | Start | Finish | Predecessors | Total slack | Free slack | Constraint | Resources | Work | Cost | Proceso |
| --- | --- | --- | --- | --- | --- | --- | --- | --- | --- | --- | --- | --- | --- |
| 218 | 1.1.1.2.1.7.4 | **Modelamiento de Requerimientos - F2 ASI1 - Consultas y Reportes de Manifiesto EER Salida por Módulo y Portal** | 6d | 2014-09-24 | 2014-10-01 |  | 29d |  |  |  |  |  |  |
| 219 | 1.1.1.2.1.7.4.1 | RF01 - Elaborar F2 ASI1: Consultas del Manifiesto EER Salida por módulo (Módulo de Manifiestos) | 2d | 2014-09-24 | 2014-09-25 | 217 | 29d | 0d | start no earlier than 2013-12-19 |  |  |  |  |
| 220 | 1.1.1.2.1.7.4.2 | RF02 - Elaborar F2 ASI1: Reportes del Manifiesto EER Salida por módulo (Módulo de Manifiestos) | 2d | 2014-09-26 | 2014-09-29 | 219 | 29d | 0d |  |  |  |  |  |
| 221 | 1.1.1.2.1.7.4.3 | RF03 - Elaborar F2 ASI1: Consultas y Reportes EER por Web (Portal SUNAT) | 2d | 2014-09-30 | 2014-10-01 | 220 | 29d | 0d |  |  |  |  |  |
| 222 | 1.1.1.2.1.7.5 | Validación F2-ASI1 con GDSA | 1d | 2014-10-02 | 2014-10-02 | 221 | 29d | 0d |  |  |  |  |  |
| 223 | 1.1.1.2.1.7.6 | Validación F2-ASI1 con normativa | 1d | 2014-10-03 | 2014-10-03 | 222 | 29d | 0d |  |  |  |  |  |
| 224 | 1.1.1.2.1.8 | **RIN04 - Regularización de la Declaración Simplificada individual y/ o Consolidada EER mediante Transmisión Electrónica y presentación de Documentos Físicos - GED Digitalizados** | 27d | 2014-10-06 | 2014-11-11 |  | 29d |  |  |  |  |  |  |
| 225 | 1.1.1.2.1.8.1 | **Modelamiento de Requerimientos - F2 ASI1** | 22d | 2014-10-06 | 2014-11-04 |  | 29d |  |  |  |  |  |  |
| 226 | 1.1.1.2.1.8.1.1 | RF01 - Elaborar F2 ASI1: Regularización Declaración simplificada individual y/o Consolidada EER que cuenten con Partidas Arancelarias contenidas en el Arancel de Aduanas. (Categorías 4d1 y 4d2) | 5d | 2014-10-06 | 2014-10-10 | 223 | 29d | 0d | start no earlier than 2013-12-19 |  |  |  |  |
| 227 | 1.1.1.2.1.8.1.2 | **RF02: Recepción de documentos digitalizados mediante el Teledespacho Web que permita la regularización de DSEER que consignan P.A. contenidas en el Arancel de Aduanas para las categorías 4 d1 y 4d2** | 8d | 2014-10-13 | 2014-10-22 |  | 29d |  |  |  |  |  |  |
| 228 | 1.1.1.2.1.8.1.2.1 | Elaborar F2 ASI1 - Teledespacho WEB | 5d | 2014-10-13 | 2014-10-17 | 226 | 29d | 0d |  |  |  |  |  |
| 229 | 1.1.1.2.1.8.1.2.2 | Elaborar F2 ASI1 - TD Colas | 1d | 2014-10-20 | 2014-10-20 | 228 | 29d | 0d |  |  |  |  |  |
| 230 | 1.1.1.2.1.8.1.2.3 | Elaborar F2 ASI1 - Teledespacho Regimenes (EER) | 2d | 2014-10-21 | 2014-10-22 | 229 | 29d | 0d |  |  |  |  |  |
| 231 | 1.1.1.2.1.8.1.3 | RF03 - Elaborar F2 ASI1: Proceso Automático de Deshabilitación de rectificación de los documentos digitalizados | 2d | 2014-10-23 | 2014-10-24 | 230 | 29d | 0d |  |  |  |  |  |
| 232 | 1.1.1.2.1.8.1.4 | RF04 - Elaborar F2 ASI1: Opción de Habilitación / Deshabilitación de rectificación de los documentos digitalizados | 3d | 2014-10-27 | 2014-10-29 | 231 | 29d | 0d |  |  |  |  |  |
| 233 | 1.1.1.2.1.8.1.5 | RF05 - Elaborar F2 ASI1: Consulta de Documentos Digitalizados | 4d | 2014-10-30 | 2014-11-04 | 232 | 29d | 0d |  |  |  |  |  |
| 234 | 1.1.1.2.1.8.2 | Validación F2-ASI1 con GDSA | 2d | 2014-11-05 | 2014-11-06 | 233 | 29d | 0d |  |  |  |  |  |
| 235 | 1.1.1.2.1.8.3 | Validación F2-ASI1 con normativa | 3d | 2014-11-07 | 2014-11-11 | 234 | 29d | 0d |  |  |  |  |  |
| 236 | 1.1.1.2.2 | **Diseño** | 93d | 2014-08-26 | 2015-01-01 |  | 36d |  |  |  | 736h | 736 |  |
| 237 | 1.1.1.2.2.1 | **Valija Diplomática** | 19d | 2014-08-26 | 2014-09-19 |  | 36d | 0d |  |  | 152h | 152 | RIN VALIJA DIPLOMATICA 03-02-2012.docx |
| 238 | 1.1.1.2.2.1.1 | **Teledespacho Manifiesto** | 8d | 2014-08-26 | 2014-09-04 |  | 36d | 11d |  |  | 64h | 64 |  |
| 239 | 1.1.1.2.2.1.1.1 | RE_01: Numeración del Manifiesto Provisional | 2d | 2014-08-26 | 2014-08-27 | 201 | 36d | 0d |  | A_DDSA_01 | 16h | 16 |  |
| 240 | 1.1.1.2.2.1.1.2 | RE_02 Manifiestos Numeración del Manifiesto-Declaración | 2d | 2014-08-28 | 2014-08-29 | 239 | 36d | 0d |  | A_DDSA_01 | 16h | 16 |  |
| 241 | 1.1.1.2.2.1.1.3 | RE-04 Numeración del manifiesto definitivo con envíos de valija diplomática | 2d | 2014-09-01 | 2014-09-02 | 240 | 36d | 0d |  | A_DDSA_01 | 16h | 16 |  |
| 242 | 1.1.1.2.2.1.1.4 | RE_05 Rectificación del Manifiesto Provisional | 2d | 2014-09-03 | 2014-09-04 | 241 | 36d | 0d |  | A_DDSA_01 | 16h | 16 |  |

Notes:
- 237: T1-Tipo-Des: Permite registrar en el manifiesto EER Salida la valija diplomática (código 3) sin destinación

| ID | WBS | Task | Duration | Start | Finish | Predecessors | Total slack | Free slack | Resources | Work | Cost |
| --- | --- | --- | --- | --- | --- | --- | --- | --- | --- | --- | --- |
| 243 | 1.1.1.2.2.1.2 | **Teledespacho Regimenes** | 2d | 2014-09-05 | 2014-09-08 |  | 36d | 29d |  | 16h | 16 |
| 244 | 1.1.1.2.2.1.2.1 | RE-03 Numeración de la DS EER Individual posterior al manifiesto | 2d | 2014-09-05 | 2014-09-08 | 242 | 36d | 0d | A_DDSA_01 | 16h | 16 |
| 245 | 1.1.1.2.2.1.3 | **Manifiesto EER Salida** | 7d | 2014-09-09 | 2014-09-17 |  | 36d | 27d |  | 56h | 56 |
| 246 | 1.1.1.2.2.1.3.1 | RE_01: Numeración del Manifiesto Provisional | 3d | 2014-09-09 | 2014-09-11 | 244 | 36d | 0d | A_DDSA_01 | 24h | 24 |
| 247 | 1.1.1.2.2.1.3.2 | RE-04 Numeración del manifiesto definitivo con envíos de valija diplomática | 2d | 2014-09-12 | 2014-09-15 | 246 | 36d | 0d | A_DDSA_01 | 16h | 16 |
| 248 | 1.1.1.2.2.1.3.3 | RE_05 Rectificación del Manifiesto Provisional | 2d | 2014-09-16 | 2014-09-17 | 247 | 36d | 0d | A_DDSA_01 | 16h | 16 |
| 249 | 1.1.1.2.2.1.4 | V&V acumulado RIN (10% desarrollo) | 2d | 2014-09-18 | 2014-09-19 | 248 | 166d |  | A_DDSA_02 | 16h | 16 |
| 250 | 1.1.1.2.2.2 | **DSEER -Ingreso Donaciones Impugnadas sin Garantía** | 16d | 2014-09-18 | 2014-10-09 |  | 36d | 0d |  | 128h | 128 |
| 251 | 1.1.1.2.2.2.1 | **Teledespacho Regimenes** | 7d | 2014-09-18 | 2014-09-26 |  | 36d |  |  | 56h | 56 |
| 252 | 1.1.1.2.2.2.1.1 | RE_06 Donaciones impugnadas sin garantías asociada a una GUIA EER | 3d | 2014-09-18 | 2014-09-22 | 248 | 36d | 0d | A_DDSA_01 | 24h | 24 |
| 253 | 1.1.1.2.2.2.1.2 | RE_08 Rectificaciòn de los datos del manifiesto EER de una DSI | 4d | 2014-09-23 | 2014-09-26 | 252 | 36d | 0d | A_DDSA_01 | 32h | 32 |
| 254 | 1.1.1.2.2.2.2 | **Módulo DS EER** | 8d | 2014-09-29 | 2014-10-08 |  | 36d |  |  | 64h | 64 |
| 255 | 1.1.1.2.2.2.2.1 | RE_07 Donaciones impugnadas sin garantías asociada a una GUIA EER por módulo DSI | 2d | 2014-09-29 | 2014-09-30 | 253 | 36d | 0d | A_DDSA_01 | 16h | 16 |
| 256 | 1.1.1.2.2.2.2.2 | RE_08 Rectificaciòn de los datos del manifiesto EER de una DSI | 3d | 2014-10-01 | 2014-10-03 | 255 | 36d | 0d | A_DDSA_01 | 24h | 24 |
| 257 | 1.1.1.2.2.2.2.3 | RE_09 Rectificaciòn de los datos del manifiesto EER en el registro de la diligencia de una DSI | 3d | 2014-10-06 | 2014-10-08 | 256 | 36d | 0d | A_DDSA_01 | 24h | 24 |
| 258 | 1.1.1.2.2.2.3 | V&V acumulado RIN (10% desarrollo) | 1d | 2014-10-09 | 2014-10-09 | 257 | 103d | 0d | A_DDSA_02 | 8h | 8 |
| 259 | 1.1.1.2.2.3 | **Consultas y Reportes (Modulo y Portal)** | 20d | 2014-10-09 | 2014-11-05 |  | 36d |  |  | 160h | 160 |
| 260 | 1.1.1.2.2.3.1 | **Manifiesto EER Salida** | 11d | 2014-10-09 | 2014-10-23 |  | 36d | 66d |  | 88h | 88 |
| 261 | 1.1.1.2.2.3.1.1 | **RE_10 Consultas del Manifiesto EER Salida por módulo** | 2d | 2014-10-09 | 2014-10-10 |  | 36d | 75d |  | 16h | 16 |
| 262 | 1.1.1.2.2.3.1.1.1 | RE_10_01 Manifiesto EER Salida - CONSULTA / REGISTROS DE CALIDAD / LIQUIDACIONES ASOCIADAS A | 2d | 2014-10-09 | 2014-10-10 | 257 | 36d | 0d | A_DDSA_01 | 16h | 16 |
| 263 | 1.1.1.2.2.3.1.2 | **RE_11 Reportes del Manifiesto EER Salida por módulo** | 9d | 2014-10-13 | 2014-10-23 |  | 36d | 72d |  | 72h | 72 |
| 264 | 1.1.1.2.2.3.1.2.1 | RE_11_01 Manifiesto EER Salida - MANIFIESTOS EER - SALIDA NUMERADOS | 3d | 2014-10-13 | 2014-10-15 | 262 | 36d | 0d | A_DDSA_01 | 24h | 24 |
| 265 | 1.1.1.2.2.3.1.2.2 | RE_11_02 Manifiesto EER Salida SOBRE MULTAS APLICADAS VINCULADAS A MANIFIESTOS EER PROVISIONALES O DEFINITIVOS | 6d | 2014-10-16 | 2014-10-23 | 264 | 36d | 0d | A_DDSA_01 | 48h | 48 |
| 266 | 1.1.1.2.2.3.2 | **Consulta en el Portal** | 5d | 2014-10-24 | 2014-10-30 |  | 36d | 84d |  | 40h | 40 |
| 267 | 1.1.1.2.2.3.2.1 | **RE_12 CONSULTAS Y REPORTES EER POR WEB** | 2d | 2014-10-24 | 2014-10-27 |  | 36d | 87d |  | 16h | 16 |
| 268 | 1.1.1.2.2.3.2.1.1 | RE_12_01 Consulta en el Portal - Consulta de Solicitudes de Rectificación e Incorporaciones | 2d | 2014-10-24 | 2014-10-27 | 265 | 36d | 0d | A_DDSA_01 | 16h | 16 |

Notes:
- 250: T1-Tipo-Des: Novena Disposición Complementaria D.Leg. 1053 / Proceso: RIN DS DONACIONES ASOCIADA A GUIA EER.docx
- 259: T1-Tipo-Des: Importante y necesario para la gestión de la aduana operativa respectos a los envíos de salida y para la transparencia de la información a los OCE . / Proceso: 2 Archivos:RIN_CONSULTAS_REPORTES_MANIFIESTOS_PRIORIDAD02.docx/RIN consultas y reportes ( modulo y portal)EER salida.docx

| ID | WBS | Task | Duration | Start | Finish | Predecessors | Total slack | Free slack | Resources | Work | Cost | T1-Tipo-Des | Proceso |
| --- | --- | --- | --- | --- | --- | --- | --- | --- | --- | --- | --- | --- | --- |
| 269 | 1.1.1.2.2.3.2.2 | **RE_14 Consulta de DS EER Individuales y/o Consolidadas en el Portal SUNAT** | 3d | 2014-10-28 | 2014-10-30 |  | 36d | 88d |  | 24h | 24 |  |  |
| 270 | 1.1.1.2.2.3.2.2.1 | RE_14_01 Consulta en el Portal | 3d | 2014-10-28 | 2014-10-30 | 268 | 36d | 0d | A_DDSA_01 | 24h | 24 |  |  |
| 271 | 1.1.1.2.2.3.3 | **Modulo DS EER** | 2d | 2014-10-31 | 2014-11-03 |  | 36d | 93d |  | 16h | 16 |  |  |
| 272 | 1.1.1.2.2.3.3.1 | **RE_13 CONSULTAS DE LA DS EER SALIDA CON SOLICITUD DE RECTIFICACIÒN** | 2d | 2014-10-31 | 2014-11-03 |  | 36d | 93d |  | 16h | 16 |  |  |
| 273 | 1.1.1.2.2.3.3.1.1 | RE_13_01 DS EER Salida - CONSULTAS/ DECLARACIÓN SIMPLIFICADA EER / RECTIFICACIONES ELECTRONICAS | 2d | 2014-10-31 | 2014-11-03 | 270 | 36d | 0d | A_DDSA_01 | 16h | 16 |  |  |
| 274 | 1.1.1.2.2.3.4 | V&V acumulado RIN (10% desarrollo) | 2d | 2014-11-04 | 2014-11-05 | 273 | 36d | 7d | A_DDSA_02 | 16h | 16 |  |  |
| 275 | 1.1.1.2.2.4 | **Regularización DS con Documentos Digitalizados e Información Complementaria** | 37d | 2014-11-12 | 2015-01-01 |  | 29d | 0d |  | 296h | 296 | Artículo 35º del DS 011-2009-EF | RIN_REGULARIZACION_POR_TRANSMISION_DSEER_SALIDAVF.docx |
| 276 | 1.1.1.2.2.4.1 | **Proceso de Selección Tipo de Regularizacion** | 3d | 2014-11-12 | 2014-11-14 |  | 29d | 34d |  | 24h | 24 |  |  |
| 277 | 1.1.1.2.2.4.1.1 | **RE_15 Regularización Declaración simplificada individual y/o Consolidada EER que cuenten con Partidas Arancelarias contenidas en el Arancel de Aduanas. (Categorías 4d1 y 4d2).** | 3d | 2014-11-12 | 2014-11-14 |  | 29d |  |  | 24h | 24 |  |  |
| 278 | 1.1.1.2.2.4.1.1.1 | RE_15_02 Proceso de selección del tipo de regularización | 3d | 2014-11-12 | 2014-11-14 | 235 | 29d | 0d | DSNA | 24h | 24 |  |  |
| 279 | 1.1.1.2.2.4.2 | **Teledespacho Regimenes** | 20d | 2014-11-17 | 2014-12-12 |  | 29d |  |  | 160h | 160 |  |  |
| 280 | 1.1.1.2.2.4.2.1 | **RE_15 Regularización Declaración simplificada individual y/o Consolidada EER que cuenten con Partidas Arancelarias contenidas en el Arancel de Aduanas. (Categorías 4d1 y 4d2).** | 6d | 2014-11-17 | 2014-11-24 |  | 29d |  |  | 48h | 48 |  |  |
| 281 | 1.1.1.2.2.4.2.1.1 | RE_15_01 Tedespacho Regimenes - transaccion nueva de regularizacion | 6d | 2014-11-17 | 2014-11-24 | 274, 278, 226 | 29d | 0d | A_DDSA_01 | 48h | 48 |  |  |
| 282 | 1.1.1.2.2.4.2.2 | **RE_16 Recepción de documentos digitalizados mediante el Teledespacho Web que permita la regularización de DSEER que consignan P.A. contenidas en el Arancel de Aduanas para las categorías 4 d1 y 4d2.** | 14d | 2014-11-25 | 2014-12-12 |  | 29d |  |  | 112h | 112 |  |  |
| 283 | 1.1.1.2.2.4.2.2.1 | **RE_16_01 Teledespacho Regimenes** | 14d | 2014-11-25 | 2014-12-12 |  | 29d |  |  | 112h | 112 |  |  |
| 284 | 1.1.1.2.2.4.2.2.1.1 | RE_16_01 _01 Transaccion de Numeración de Digitalizados | 6d | 2014-11-25 | 2014-12-02 | 281 | 29d | 0d | A_DDSA_01 | 48h | 48 |  |  |
| 285 | 1.1.1.2.2.4.2.2.1.2 | RE_16_01 _02 Transaccion de Rectificacion de Digitalizados | 4d | 2014-12-03 | 2014-12-08 | 284 | 29d | 0d | A_DDSA_01 | 32h | 32 |  |  |
| 286 | 1.1.1.2.2.4.2.2.1.3 | RE_16_01 _03 Transaccion de Transmisiones parciales | 4d | 2014-12-09 | 2014-12-12 | 285 | 29d | 0d | A_DDSA_01 | 32h | 32 |  |  |
| 287 | 1.1.1.2.2.4.3 | **Pl/Sql (Job) ó Scheduler Java** | 4d | 2014-12-15 | 2014-12-18 |  | 29d |  |  | 32h | 32 |  |  |
| 288 | 1.1.1.2.2.4.3.1 | **RE_17 Proceso Automático de Deshabilitación de rectificación de los documentos digitalizados.** | 4d | 2014-12-15 | 2014-12-18 |  | 29d |  |  | 32h | 32 |  |  |
| 289 | 1.1.1.2.2.4.3.1.1 | RE_17_01 Pl/Sql (Job) ó Scheduler Java | 4d | 2014-12-15 | 2014-12-18 | 286 | 29d | 0d | A_DDSA_01 | 32h | 32 |  |  |
| 290 | 1.1.1.2.2.4.4 | **Modulo de DS EER Salida** | 2d | 2014-12-19 | 2014-12-22 |  | 29d |  |  | 16h | 16 |  |  |
| 291 | 1.1.1.2.2.4.4.1 | **RE_18 Opción de Habilitación /Deshabilitación de rectificación de los documentos digitalizados** | 2d | 2014-12-19 | 2014-12-22 |  | 29d |  |  | 16h | 16 |  |  |
| 292 | 1.1.1.2.2.4.4.1.1 | RE_18_01 Módulo de DS EER Salida - Opción para permitir la transmisión de rectificación de digitalizados (RF 4) | 2d | 2014-12-19 | 2014-12-22 | 289 | 29d | 0d | A_DDSA_01 | 16h | 16 |  |  |

| ID | WBS | Task | Duration | Start | Finish | Predecessors | Total slack | Free slack | Resources | Work | Cost | Proceso |
| --- | --- | --- | --- | --- | --- | --- | --- | --- | --- | --- | --- | --- |
| 293 | 1.1.1.2.2.4.5 | **Consulta WEB** | 4d | 2014-12-23 | 2014-12-26 |  | 29d |  |  | 32h | 32 |  |
| 294 | 1.1.1.2.2.4.5.1 | **RE_20 Consulta de Documentos Digitalizados (Modulo Web)** | 4d | 2014-12-23 | 2014-12-26 |  | 29d |  |  | 32h | 32 |  |
| 295 | 1.1.1.2.2.4.5.1.1 | RE_20_01 Consulta WEB en la Intranet, sólo para el funcionario aduanero. | 4d | 2014-12-23 | 2014-12-26 | 292 | 29d | 0d | A_DDSA_01 | 32h | 32 |  |
| 296 | 1.1.1.2.2.4.6 | V&V acumulado RIN (10% desarrollo) | 4d | 2014-12-29 | 2015-01-01 | 295 | 29d | 0d | A_DDSA_02 | 32h | 32 |  |
| 297 | 1.1.1.2.3 | **Construccion** | 157d | 2014-09-22 | 2015-04-28 |  | 103d |  |  | 1816h | 1,816 |  |
| 298 | 1.1.1.2.3.1 | **Valija Diplomática (EER Salida)** | 46d | 2014-09-22 | 2014-11-24 | 237 | 166d |  |  | 368h | 368 | RIN VALIJA DIPLOMATICA 03-02-2012.docx |
| 299 | 1.1.1.2.3.1.1 | **Pase Teledespacho Manifiesto** | 20d | 2014-09-22 | 2014-10-17 | 238 | 166d |  |  | 160h | 160 |  |
| 300 | 1.1.1.2.3.1.1.1 | RE_01: Numeración del Manifiesto Provisional | 4d | 2014-09-22 | 2014-09-25 | 239 | 166d | 0d | P_DDSA_01 | 32h | 32 |  |
| 301 | 1.1.1.2.3.1.1.2 | RE_02 Manifiestos Numeración del Manifiesto-Declaración | 4d | 2014-09-26 | 2014-10-01 | 240, 300 | 166d | 0d | P_DDSA_01 | 32h | 32 |  |
| 302 | 1.1.1.2.3.1.1.3 | RE-04 Numeración del manifiesto definitivo con envíos de valija diplomática | 4d | 2014-10-02 | 2014-10-07 | 241, 301 | 166d | 0d | P_DDSA_01 | 32h | 32 |  |
| 303 | 1.1.1.2.3.1.1.4 | RE_05 Rectificación del Manifiesto Provisional | 4d | 2014-10-08 | 2014-10-13 | 242, 302 | 166d | 0d | P_DDSA_01 | 32h | 32 |  |
| 304 | 1.1.1.2.3.1.1.5 | Integración de fuentes | 1d | 2014-10-14 | 2014-10-14 | 303 | 166d | 0d | P_DDSA_01 | 8h | 8 |  |
| 305 | 1.1.1.2.3.1.1.6 | Pruebas en desarrollo | 2d | 2014-10-15 | 2014-10-16 | 304 | 166d | 0d | P_DDSA_01 | 16h | 16 |  |
| 306 | 1.1.1.2.3.1.1.7 | Documentación y Generación del Pase | 1d | 2014-10-17 | 2014-10-17 | 305 | 166d | 0d | P_DDSA_01 | 8h | 8 |  |
| 307 | 1.1.1.2.3.1.2 | **Pase Teledespacho Regimenes** | 5d | 2014-10-20 | 2014-10-24 | 243 | 278d |  |  | 40h | 40 |  |
| 308 | 1.1.1.2.3.1.2.1 | RE-03 Numeración de la DS EER Individual posterior al manifiesto | 3d | 2014-10-20 | 2014-10-22 | 244, 306 | 278d | 0d | P_DDSA_01 | 24h | 24 |  |
| 309 | 1.1.1.2.3.1.2.2 | Integración de fuentes | 0.5d | 2014-10-23 | 2014-10-23 | 308 | 278d | 0d | P_DDSA_01 | 4h | 4 |  |
| 310 | 1.1.1.2.3.1.2.3 | Pruebas en desarrollo | 1d | 2014-10-23 | 2014-10-24 | 309 | 278d | 0d | P_DDSA_01 | 8h | 8 |  |
| 311 | 1.1.1.2.3.1.2.4 | Documentación y Generación del Pase | 0.5d | 2014-10-24 | 2014-10-24 | 310 | 278d | 0d | P_DDSA_01 | 4h | 4 |  |
| 312 | 1.1.1.2.3.1.3 | **Pase Manifiesto EER Salida** | 17d | 2014-10-27 | 2014-11-18 | 245 | 278d |  |  | 136h | 136 |  |
| 313 | 1.1.1.2.3.1.3.1 | RE_01: Numeración del Manifiesto Provisional | 6d | 2014-10-27 | 2014-11-03 | 246, 311 | 278d | 0d | P_DDSA_01 | 48h | 48 |  |
| 314 | 1.1.1.2.3.1.3.2 | RE-04 Numeración del manifiesto definitivo con envíos de valija diplomática | 4d | 2014-11-04 | 2014-11-07 | 247, 313 | 278d | 0d | P_DDSA_01 | 32h | 32 |  |
| 315 | 1.1.1.2.3.1.3.3 | RE_05 Rectificación del Manifiesto Provisional | 4d | 2014-11-10 | 2014-11-13 | 248, 314 | 278d | 0d | P_DDSA_01 | 32h | 32 |  |
| 316 | 1.1.1.2.3.1.3.4 | Integración de fuentes | 0.5d | 2014-11-14 | 2014-11-14 | 315 | 278d | 0d | P_DDSA_01 | 4h | 4 |  |
| 317 | 1.1.1.2.3.1.3.5 | Pruebas en desarrollo | 2d | 2014-11-14 | 2014-11-18 | 316 | 278d | 0d | P_DDSA_01 | 16h | 16 |  |
| 318 | 1.1.1.2.3.1.3.6 | Documentación y Generación del Pase | 0.5d | 2014-11-18 | 2014-11-18 | 317 | 278d | 0d | P_DDSA_01 | 4h | 4 |  |
| 319 | 1.1.1.2.3.1.4 | V&V acumulado RIN (10% desarrollo) | 4d | 2014-11-19 | 2014-11-24 | 318 | 291d |  | P_DDSA_01 | 32h | 32 |  |

Notes:
- 298: T1-Tipo-Des: Permite registrar en el manifiesto EER Salida la valija diplomática (código 3) sin destinación

| ID | WBS | Task | Duration | Start | Finish | Predecessors | Total slack | Free slack | Resources | Work | Cost |
| --- | --- | --- | --- | --- | --- | --- | --- | --- | --- | --- | --- |
| 320 | 1.1.1.2.3.2 | **DS EER - INGRESO DONACIONES IMPUGNADAS SIN GARANTIA** | 76d | 2014-10-10 | 2015-01-23 | 250 | 103d |  |  | 320h | 320 |
| 321 | 1.1.1.2.3.2.1 | **Pase Teledespacho Regimenes** | 17d | 2014-11-19 | 2014-12-11 | 251 | 278d |  |  | 136h | 136 |
| 322 | 1.1.1.2.3.2.1.1 | RE_06 Donaciones impugnadas sin garantías asociada a una GUIA EER | 7d | 2014-11-19 | 2014-11-27 | 252, 318 | 278d | 0d | P_DDSA_01 | 56h | 56 |
| 323 | 1.1.1.2.3.2.1.2 | RE_08 Rectificaciòn de los datos del manifiesto EER de una DSI | 7d | 2014-11-28 | 2014-12-08 | 253, 322 | 278d | 0d | P_DDSA_01 | 56h | 56 |
| 324 | 1.1.1.2.3.2.1.3 | Integración de fuentes | 0.5d | 2014-12-09 | 2014-12-09 | 323 | 278d | 0d | P_DDSA_01 | 4h | 4 |
| 325 | 1.1.1.2.3.2.1.4 | Pruebas en desarrollo | 2d | 2014-12-09 | 2014-12-11 | 324 | 278d | 0d | P_DDSA_01 | 16h | 16 |
| 326 | 1.1.1.2.3.2.1.5 | Documentación y Generación del Pase | 0.5d | 2014-12-11 | 2014-12-11 | 325 | 278d |  | P_DDSA_01 | 4h | 4 |
| 327 | 1.1.1.2.3.2.2 | **Pase Modulo DS EER Salida** | 16d | 2015-01-02 | 2015-01-23 | 254 | 43d |  |  | 128h | 128 |
| 328 | 1.1.1.2.3.2.2.1 | RE_07 Donaciones impugnadas sin garantías asociada a una GUIA EER por módulo DSI | 4d | 2015-01-02 | 2015-01-07 | 255, 296 | 43d | 0d | A_DDSA_01 | 32h | 32 |
| 329 | 1.1.1.2.3.2.2.2 | RE_08 Rectificaciòn de los datos del manifiesto EER de una DSI | 5d | 2015-01-08 | 2015-01-14 | 256, 328 | 43d | 0d | A_DDSA_01 | 40h | 40 |
| 330 | 1.1.1.2.3.2.2.3 | RE_09 Rectificaciòn de los datos del manifiesto EER en el registro de la diligencia de una DSI | 4d | 2015-01-15 | 2015-01-20 | 257, 329 | 43d | 0d | A_DDSA_01 | 32h | 32 |
| 331 | 1.1.1.2.3.2.2.4 | Integración de fuentes | 0.5d | 2015-01-21 | 2015-01-21 | 330 | 43d | 0d | A_DDSA_01 | 4h | 4 |
| 332 | 1.1.1.2.3.2.2.5 | Pruebas en desarrollo | 2d | 2015-01-21 | 2015-01-23 | 331 | 43d | 0d | A_DDSA_01 | 16h | 16 |
| 333 | 1.1.1.2.3.2.2.6 | Documentación y Generación del Pase | 0.5d | 2015-01-23 | 2015-01-23 | 332 | 43d | 0d | A_DDSA_01 | 4h | 4 |
| 334 | 1.1.1.2.3.2.3 | V&V acumulado RIN (10% desarrollo) | 7d | 2014-10-10 | 2014-10-20 | 258 | 316d |  | P_DDSA_02 | 56h | 56 |
| 335 | 1.1.1.2.3.3 | **Consultas y Reportes (Modulo y Portal)** | 45d | 2015-01-26 | 2015-03-27 | 259 | 43d |  |  | 360h | 360 |
| 336 | 1.1.1.2.3.3.1 | **Pase Manifiesto EER Salida** | 23d | 2015-01-26 | 2015-02-25 | 260 | 43d |  |  | 184h | 184 |
| 337 | 1.1.1.2.3.3.1.1 | **RE_10 Consultas del Manifiesto EER Salida por módulo** | 6d | 2015-01-26 | 2015-02-02 | 261 | 43d |  |  | 48h | 48 |
| 338 | 1.1.1.2.3.3.1.1.1 | RE_10_01 Manifiesto EER Salida - CONSULTA / REGISTROS DE CALIDAD / LIQUIDACIONES ASOCIADAS A | 6d | 2015-01-26 | 2015-02-02 | 262, 333 | 43d | 0d | A_DDSA_01 | 48h | 48 |
| 339 | 1.1.1.2.3.3.1.2 | **RE_11 Reportes del Manifiesto EER Salida por módulo** | 17d | 2015-02-03 | 2015-02-25 | 263 | 43d |  |  | 136h | 136 |
| 340 | 1.1.1.2.3.3.1.2.1 | RE_11_01 Manifiesto EER Salida - MANIFIESTOS EER - SALIDA NUMERADOS | 6d | 2015-02-03 | 2015-02-10 | 264, 338 | 43d | 0d | A_DDSA_01 | 48h | 48 |
| 341 | 1.1.1.2.3.3.1.2.2 | RE_11_02 Manifiesto EER Salida SOBRE MULTAS APLICADAS VINCULADAS A MANIFIESTOS EER PROVISIONALES O DEFINITIVOS | 7d | 2015-02-11 | 2015-02-19 | 265, 340 | 43d | 0d | A_DDSA_01 | 56h | 56 |
| 342 | 1.1.1.2.3.3.1.2.3 | Integración de fuentes | 1d | 2015-02-20 | 2015-02-20 | 341 | 43d | 0d | A_DDSA_01 | 8h | 8 |
| 343 | 1.1.1.2.3.3.1.2.4 | Pruebas en desarrollo | 2d | 2015-02-23 | 2015-02-24 | 342 | 43d | 0d | A_DDSA_01 | 16h | 16 |
| 344 | 1.1.1.2.3.3.1.2.5 | Documentación y Generación del Pase | 1d | 2015-02-25 | 2015-02-25 | 343 | 43d | 0d | A_DDSA_01 | 8h | 8 |

Notes:
- 320: T1-Tipo-Des: Novena Disposición Complementaria D.Leg. 1053 / Proceso: RIN DS DONACIONES ASOCIADA A GUIA EER.docx
- 335: T1-Tipo-Des: Importante y necesario para la gestión de la aduana operativa respectos a los envíos de salida y para la transparencia de la información a los OCE . / Proceso: 2 Archivos:RIN_CONSULTAS_REPORTES_MANIFIESTOS_PRIORIDAD02.docx/RIN consultas y reportes ( modulo y portal)EER salida.docx

| ID | WBS | Task | Duration | Start | Finish | Predecessors | Total slack | Free slack | Resources | Work | Cost | T1-Tipo-Des | Proceso |
| --- | --- | --- | --- | --- | --- | --- | --- | --- | --- | --- | --- | --- | --- |
| 345 | 1.1.1.2.3.3.2 | **Pase Consulta en el Portal** | 11d | 2015-02-26 | 2015-03-12 | 266 | 43d |  |  | 88h | 88 |  |  |
| 346 | 1.1.1.2.3.3.2.1 | **RE_12 CONSULTAS Y REPORTES EER POR WEB** | 4d | 2015-02-26 | 2015-03-03 | 267 | 43d |  |  | 32h | 32 |  |  |
| 347 | 1.1.1.2.3.3.2.1.1 | RE_12_01 Consulta en el Portal - Consulta de Solicitudes de Rectificación e Incorporaciones | 4d | 2015-02-26 | 2015-03-03 | 268, 344 | 43d | 0d | A_DDSA_01 | 32h | 32 |  |  |
| 348 | 1.1.1.2.3.3.2.2 | **RE_14 Consulta de DS EER Individuales y/o Consolidadas en el Portal SUNAT** | 7d | 2015-03-04 | 2015-03-12 | 269 | 43d |  |  | 56h | 56 |  |  |
| 349 | 1.1.1.2.3.3.2.2.1 | RE_14_01 Consulta en el Portal | 6d | 2015-03-04 | 2015-03-11 | 270, 347 | 43d | 0d | A_DDSA_01 | 48h | 48 |  |  |
| 350 | 1.1.1.2.3.3.2.2.2 | Integración de fuentes , Pruebas en Desarrollo, Documentación y Generación del Pase | 1d | 2015-03-12 | 2015-03-12 | 349 | 43d | 0d | A_DDSA_01 | 8h | 8 |  |  |
| 351 | 1.1.1.2.3.3.3 | **Pase Modulo DS EER Salida** | 7d | 2015-03-13 | 2015-03-23 | 271 | 43d |  |  | 56h | 56 |  |  |
| 352 | 1.1.1.2.3.3.3.1 | **RE_13 CONSULTAS DE LA DS EER SALIDA CON SOLICITUD DE RECTIFICACIÒN** | 7d | 2015-03-13 | 2015-03-23 | 272 | 43d |  |  | 56h | 56 |  |  |
| 353 | 1.1.1.2.3.3.3.1.1 | RE_13_01 DS EER Salida - CONSULTAS/ DECLARACIÓN SIMPLIFICADA EER / RECTIFICACIONES ELECTRONICAS | 5d | 2015-03-13 | 2015-03-19 | 273, 350 | 43d | 0d | A_DDSA_01 | 40h | 40 |  |  |
| 354 | 1.1.1.2.3.3.3.1.2 | Integración de fuentes | 0.5d | 2015-03-20 | 2015-03-20 | 353 | 43d | 0d | A_DDSA_01 | 4h | 4 |  |  |
| 355 | 1.1.1.2.3.3.3.1.3 | Pruebas en desarrollo | 1d | 2015-03-20 | 2015-03-23 | 354 | 43d | 0d | A_DDSA_01 | 8h | 8 |  |  |
| 356 | 1.1.1.2.3.3.3.1.4 | Documentación y Generación del Pase | 0.5d | 2015-03-23 | 2015-03-23 | 355 | 43d | 0d | A_DDSA_01 | 4h | 4 |  |  |
| 357 | 1.1.1.2.3.3.4 | V&V acumulado RIN (10% desarrollo) | 4d | 2015-03-24 | 2015-03-27 | 356 | 202d |  | P_DDSA_02 | 32h | 32 |  |  |
| 358 | 1.1.1.2.3.4 | **Regularización DS con Documentos Digitalizados e Información Complementaria** | 83d | 2015-01-02 | 2015-04-28 | 275 | 29d |  |  | 768h | 768 | Artículo 35º del DS 011-2009-EF | RIN_REGULARIZACION_POR_TRANSMISION_DSEER_SALIDAVF.docx |
| 359 | 1.1.1.2.3.4.1 | Pase Proceso de Selección Tipo de Regularizacion | 15d | 2015-01-02 | 2015-01-22 | 276 | 29d | 0d | P_DDSA_01 | 120h | 120 |  |  |
| 360 | 1.1.1.2.3.4.2 | **Pase Teledespacho Regimenes** | 49d | 2015-01-23 | 2015-04-01 | 279 | 29d |  |  | 392h | 392 |  |  |
| 361 | 1.1.1.2.3.4.2.1 | **RE_15 Regularización Declaración simplificada individual y/o Consolidada EER que cuenten con Partidas Arancelarias contenidas en el Arancel de Aduanas. (Categorías 4d1 y 4d2).** | 17d | 2015-01-23 | 2015-02-16 | 280 | 29d |  |  | 136h | 136 |  |  |
| 362 | 1.1.1.2.3.4.2.1.1 | RE_15_01 Tedespacho Regimenes - transaccion nueva de regularizacion | 17d | 2015-01-23 | 2015-02-16 | 281, 359 | 29d | 0d | P_DDSA_01 | 136h | 136 |  |  |
| 363 | 1.1.1.2.3.4.2.2 | **RE_16 Recepción de documentos digitalizados mediante el Teledespacho Web que permita la regularización de DSEER que consignan P.A. contenidas en el Arancel de Aduanas para las categorías 4 d1 y 4d2.** | 32d | 2015-02-17 | 2015-04-01 | 282 | 29d |  |  | 256h | 256 |  |  |
| 364 | 1.1.1.2.3.4.2.2.1 | **RE_16_01 Teledespacho Regimenes** | 32d | 2015-02-17 | 2015-04-01 | 283 | 29d |  |  | 256h | 256 |  |  |
| 365 | 1.1.1.2.3.4.2.2.1.1 | RE_16_01 _01 Transaccion de Numeración de Digitalizados | 12d | 2015-02-17 | 2015-03-04 | 284, 362 | 29d | 0d | P_DDSA_01 | 96h | 96 |  |  |
| 366 | 1.1.1.2.3.4.2.2.1.2 | RE_16_01 _02 Transaccion de Rectificacion de Digitalizados | 8d | 2015-03-05 | 2015-03-16 | 285, 365 | 29d | 0d | P_DDSA_01 | 64h | 64 |  |  |
| 367 | 1.1.1.2.3.4.2.2.1.3 | RE_16_01 _03 Transaccion de Transmisiones parciales | 6d | 2015-03-17 | 2015-03-24 | 286, 366 | 29d | 0d | P_DDSA_01 | 48h | 48 |  |  |
| 368 | 1.1.1.2.3.4.2.2.1.4 | Integración de fuentes | 1d | 2015-03-25 | 2015-03-25 | 367 | 29d | 0d | P_DDSA_01 | 8h | 8 |  |  |
| 369 | 1.1.1.2.3.4.2.2.1.5 | Pruebas en desarrollo | 4d | 2015-03-26 | 2015-03-31 | 368 | 29d | 0d | P_DDSA_01 | 32h | 32 |  |  |
| 370 | 1.1.1.2.3.4.2.2.1.6 | Documentación y Generación del Pase | 1d | 2015-04-01 | 2015-04-01 | 369 | 29d | 0d | P_DDSA_01 | 8h | 8 |  |  |

| ID | WBS | Task | Duration | Start | Finish | Predecessors | Total slack | Free slack | Resources | Work | Cost | Proceso |
| --- | --- | --- | --- | --- | --- | --- | --- | --- | --- | --- | --- | --- |
| 371 | 1.1.1.2.3.4.3 | **Pase Pl/Sql (Job) ó Scheduler Java** | 8d | 2015-04-02 | 2015-04-13 | 287 | 29d |  |  | 64h | 64 |  |
| 372 | 1.1.1.2.3.4.3.1 | **RE_17 Proceso Automático de Deshabilitación de rectificación de los documentos digitalizados.** | 8d | 2015-04-02 | 2015-04-13 | 288 | 29d |  |  | 64h | 64 |  |
| 373 | 1.1.1.2.3.4.3.1.1 | RE_17_01 Pl/Sql (Job) ó Scheduler Java | 6d | 2015-04-02 | 2015-04-09 | 289, 370 | 29d | 0d | P_DDSA_01 | 48h | 48 |  |
| 374 | 1.1.1.2.3.4.3.1.2 | Integración de fuentes | 0.5d | 2015-04-10 | 2015-04-10 | 373 | 29d | 0d | P_DDSA_01 | 4h | 4 |  |
| 375 | 1.1.1.2.3.4.3.1.3 | Pruebas en desarrollo | 1d | 2015-04-10 | 2015-04-13 | 374 | 29d | 0d | P_DDSA_01 | 8h | 8 |  |
| 376 | 1.1.1.2.3.4.3.1.4 | Documentación y Generación del Pase | 0.5d | 2015-04-13 | 2015-04-13 | 375 | 29d | 0d | P_DDSA_01 | 4h | 4 |  |
| 377 | 1.1.1.2.3.4.4 | **Pase Modulo DS EER Salida** | 7d | 2015-04-14 | 2015-04-22 | 290 | 29d |  |  | 56h | 56 |  |
| 378 | 1.1.1.2.3.4.4.1 | **RE_18 Opción de Habilitación /Deshabilitación de rectificación de los documentos digitalizados** | 7d | 2015-04-14 | 2015-04-22 | 291 | 29d |  |  | 56h | 56 |  |
| 379 | 1.1.1.2.3.4.4.1.1 | RE_18_01 Módulo de DS EER Salida - Opción para permitir la transmisión de rectificación de digitalizados (RF 4) | 5d | 2015-04-14 | 2015-04-20 | 292, 376 | 29d | 0d | P_DDSA_01 | 40h | 40 |  |
| 380 | 1.1.1.2.3.4.4.1.2 | Integración de fuentes | 0.5d | 2015-04-21 | 2015-04-21 | 379 | 29d | 0d | P_DDSA_01 | 4h | 4 |  |
| 381 | 1.1.1.2.3.4.4.1.3 | Pruebas en desarrollo | 1d | 2015-04-21 | 2015-04-22 | 380 | 29d | 0d | P_DDSA_01 | 8h | 8 |  |
| 382 | 1.1.1.2.3.4.4.1.4 | Documentación y Generación del Pase | 0.5d | 2015-04-22 | 2015-04-22 | 381 | 29d | 0d | P_DDSA_01 | 4h | 4 |  |
| 383 | 1.1.1.2.3.4.5 | **Pase Consulta WEB** | 8d | 2015-03-24 | 2015-04-02 | 293 | 43d |  |  | 64h | 64 |  |
| 384 | 1.1.1.2.3.4.5.1 | **RE_20 Consulta de Documentos Digitalizados (Modulo Web)** | 8d | 2015-03-24 | 2015-04-02 | 294 | 43d |  |  | 64h | 64 |  |
| 385 | 1.1.1.2.3.4.5.1.1 | RE_20_01 Consulta WEB en la Intranet, sólo para el funcionario aduanero. | 6d | 2015-03-24 | 2015-03-31 | 295, 356 | 43d | 0d | A_DDSA_01 | 48h | 48 |  |
| 386 | 1.1.1.2.3.4.5.1.2 | Integración de fuentes | 0.5d | 2015-04-01 | 2015-04-01 | 385 | 43d | 0d | A_DDSA_01 | 4h | 4 |  |
| 387 | 1.1.1.2.3.4.5.1.3 | Pruebas en desarrollo | 1d | 2015-04-01 | 2015-04-02 | 386 | 43d | 0d | A_DDSA_01 | 8h | 8 |  |
| 388 | 1.1.1.2.3.4.5.1.4 | Documentación y Generación del Pase | 0.5d | 2015-04-02 | 2015-04-02 | 387 | 43d | 0d | A_DDSA_01 | 4h | 4 |  |
| 389 | 1.1.1.2.3.4.6 | V&V acumulado RIN (10% desarrollo) | 5d | 2015-04-03 | 2015-04-09 | 388 | 193d |  | P_DDSA_02 | 40h | 40 |  |
| 390 | 1.1.1.2.3.4.7 | Elaboración de Cartilla Usuario | 4d | 2015-04-23 | 2015-04-28 | 382, 388 | 29d | 0d | P_DDSA_01 | 32h | 32 |  |
| 391 | 1.1.1.2.4 | **Pruebas del Sistema** | 118d | 2015-04-29 | 2015-10-09 | 390 | 29d |  |  | 1152h | 1,152 |  |
| 392 | 1.1.1.2.4.1 | **Valija Diplomática** | 26d | 2015-04-29 | 2015-06-03 |  | 29d |  |  | 272h | 272 | RIN VALIJA DIPLOMATICA 03-02-2012.docx |
| 393 | 1.1.1.2.4.1.1 | **Pase Teledespacho Manifiesto** | 9d | 2015-04-29 | 2015-05-11 |  | 29d |  |  | 72h | 72 |  |
| 394 | 1.1.1.2.4.1.1.1 | Elaboración de casos de prueba | 1d | 2015-04-29 | 2015-04-29 | 306 | 29d | 0d | I_AC_DCCSA | 8h | 8 |  |
| 395 | 1.1.1.2.4.1.1.2 | Ejecución de casos de prueba | 8d | 2015-04-30 | 2015-05-11 | 394 | 29d | 0d | I_AC_DCCSA | 64h | 64 |  |
| 396 | 1.1.1.2.4.1.2 | Pruebas de Aceptación (Conformidad normativa) | 2d | 2015-05-12 | 2015-05-13 | 395 | 169d |  | I_AC_DCCSA; INTA | 32h | 32 |  |
| 397 | 1.1.1.2.4.1.3 | Elaboración de documentos de calidad (Informe de Pruebas) | 2d | 2015-05-12 | 2015-05-13 | 395 | 29d | 0d | I_AC_DCCSA | 16h | 16 |  |

Notes:
- 392: T1-Tipo-Des: Permite registrar en el manifiesto EER Salida la valija diplomática (código 3) sin destinación

| ID | WBS | Task | Duration | Start | Finish | Predecessors | Total slack | Free slack | Resources | Work | Cost |
| --- | --- | --- | --- | --- | --- | --- | --- | --- | --- | --- | --- |
| 398 | 1.1.1.2.4.1.4 | **Pase Teledespacho Regimenes** | 3d | 2015-05-14 | 2015-05-18 |  | 29d |  |  | 24h | 24 |
| 399 | 1.1.1.2.4.1.4.1 | Elaboración de casos de prueba | 1d | 2015-05-14 | 2015-05-14 | 397 | 29d | 0d | I_AC_DCCSA | 8h | 8 |
| 400 | 1.1.1.2.4.1.4.2 | Ejecución de casos de prueba | 2d | 2015-05-15 | 2015-05-18 | 399 | 29d | 0d | I_AC_DCCSA | 16h | 16 |
| 401 | 1.1.1.2.4.1.5 | Pruebas de Aceptación (Conformidad normativa) | 1d | 2015-05-19 | 2015-05-19 | 400 | 165d |  | I_AC_DCCSA; INTA | 16h | 16 |
| 402 | 1.1.1.2.4.1.6 | Elaboración de documentos de calidad (Informe de Pruebas) | 2d | 2015-05-19 | 2015-05-20 | 400 | 29d | 0d | I_AC_DCCSA | 16h | 16 |
| 403 | 1.1.1.2.4.1.7 | **Pase Manifiesto EER Salida** | 8d | 2015-05-21 | 2015-06-01 |  | 29d |  |  | 64h | 64 |
| 404 | 1.1.1.2.4.1.7.1 | Elaboración de casos de prueba | 1d | 2015-05-21 | 2015-05-21 | 402 | 29d | 0d | I_AC_DCCSA | 8h | 8 |
| 405 | 1.1.1.2.4.1.7.2 | Ejecución de casos de prueba | 7d | 2015-05-22 | 2015-06-01 | 404 | 29d | 0d | I_AC_DCCSA | 56h | 56 |
| 406 | 1.1.1.2.4.1.8 | Pruebas de Aceptación (Conformidad normativa) | 1d | 2015-06-02 | 2015-06-02 | 405 | 155d |  | I_AC_DCCSA; INTA | 16h | 16 |
| 407 | 1.1.1.2.4.1.9 | Elaboración de documentos de calidad (Informe de Pruebas) | 2d | 2015-06-02 | 2015-06-03 | 405 | 29d | 0d | I_AC_DCCSA | 16h | 16 |
| 408 | 1.1.1.2.4.2 | **DSEER -INGRESO DONACIONES IMPUGNADAS SIN GARANTIA** | 20d | 2015-06-04 | 2015-07-01 |  | 29d |  |  | 192h | 192 |
| 409 | 1.1.1.2.4.2.1 | **Pase Teledespacho Regimenes** | 8d | 2015-06-04 | 2015-06-15 |  | 29d |  |  | 64h | 64 |
| 410 | 1.1.1.2.4.2.1.1 | Elaboración de casos de prueba | 1d | 2015-06-04 | 2015-06-04 | 407 | 29d | 0d | I_AC_DCCSA | 8h | 8 |
| 411 | 1.1.1.2.4.2.1.2 | Ejecución de casos de prueba | 7d | 2015-06-05 | 2015-06-15 | 410 | 29d | 0d | I_AC_DCCSA | 56h | 56 |
| 412 | 1.1.1.2.4.2.2 | Pruebas de Aceptación (Conformidad normativa) | 1d | 2015-06-16 | 2015-06-16 | 411 | 145d |  | I_AC_DCCSA; INTA | 16h | 16 |
| 413 | 1.1.1.2.4.2.3 | Elaboración de documentos de calidad (Informe de Pruebas) | 2d | 2015-06-16 | 2015-06-17 | 411 | 29d | 0d | I_AC_DCCSA | 16h | 16 |
| 414 | 1.1.1.2.4.2.4 | **Pase Modulo DS EER Salida** | 8d | 2015-06-18 | 2015-06-29 |  | 29d |  |  | 64h | 64 |
| 415 | 1.1.1.2.4.2.4.1 | Elaboración de casos de prueba | 1d | 2015-06-18 | 2015-06-18 | 413 | 29d | 0d | I_AC_DCCSA | 8h | 8 |
| 416 | 1.1.1.2.4.2.4.2 | Ejecución de casos de prueba | 7d | 2015-06-19 | 2015-06-29 | 415 | 29d | 0d | I_AC_DCCSA | 56h | 56 |
| 417 | 1.1.1.2.4.2.5 | Pruebas de Aceptación (Conformidad normativa) | 1d | 2015-06-30 | 2015-06-30 | 416 | 135d |  | I_AC_DCCSA; INTA | 16h | 16 |
| 418 | 1.1.1.2.4.2.6 | Elaboración de documentos de calidad (Informe de Pruebas) | 2d | 2015-06-30 | 2015-07-01 | 416 | 29d | 0d | I_AC_DCCSA | 16h | 16 |
| 419 | 1.1.1.2.4.3 | **Consultas y Reportes (Modulo y Portal)** | 30d | 2015-07-02 | 2015-08-12 |  | 29d |  |  | 304h | 304 |
| 420 | 1.1.1.2.4.3.1 | **Pase Manifiesto EER Salida** | 14d | 2015-07-02 | 2015-07-21 |  | 29d |  |  | 128h | 128 |
| 421 | 1.1.1.2.4.3.1.1 | **RE_10 Consultas del Manifiesto EER Salida por módulo** | 4d | 2015-07-02 | 2015-07-07 |  | 29d |  |  | 32h | 32 |
| 422 | 1.1.1.2.4.3.1.1.1 | Elaboración de casos de prueba | 1d | 2015-07-02 | 2015-07-02 | 418 | 29d | 0d | I_AC_DCCSA | 8h | 8 |
| 423 | 1.1.1.2.4.3.1.1.2 | Ejecución de casos de prueba | 3d | 2015-07-03 | 2015-07-07 | 422 | 29d | 0d | I_AC_DCCSA | 24h | 24 |

Notes:
- 408: T1-Tipo-Des: Novena Disposición Complementaria D.Leg. 1053 / Proceso: RIN DS DONACIONES ASOCIADA A GUIA EER.docx
- 419: T1-Tipo-Des: Importante y necesario para la gestión de la aduana operativa respectos a los envíos de salida y para la transparencia de la información a los OCE . / Proceso: 2 Archivos:RIN_CONSULTAS_REPORTES_MANIFIESTOS_PRIORIDAD02.docx/RIN consultas y reportes ( modulo y portal)EER salida.docx

| ID | WBS | Task | Duration | Start | Finish | Predecessors | Total slack | Free slack | Resources | Work | Cost | T1-Tipo-Des | Proceso |
| --- | --- | --- | --- | --- | --- | --- | --- | --- | --- | --- | --- | --- | --- |
| 424 | 1.1.1.2.4.3.1.2 | **RE_11 Reportes del Manifiesto EER Salida por módulo** | 8d | 2015-07-08 | 2015-07-17 |  | 29d |  |  | 64h | 64 |  |  |
| 425 | 1.1.1.2.4.3.1.2.1 | Elaboración de casos de prueba | 1d | 2015-07-08 | 2015-07-08 | 423 | 29d | 0d | I_AC_DCCSA | 8h | 8 |  |  |
| 426 | 1.1.1.2.4.3.1.2.2 | Ejecución de casos de prueba | 7d | 2015-07-09 | 2015-07-17 | 425 | 29d | 0d | I_AC_DCCSA | 56h | 56 |  |  |
| 427 | 1.1.1.2.4.3.1.3 | Pruebas de Aceptación (Conformidad normativa) | 1d | 2015-07-20 | 2015-07-20 | 426 | 121d |  | I_AC_DCCSA; INTA | 16h | 16 |  |  |
| 428 | 1.1.1.2.4.3.1.4 | Elaboración de documentos de calidad (Informe de Pruebas) | 2d | 2015-07-20 | 2015-07-21 | 426 | 29d | 0d | I_AC_DCCSA | 16h | 16 |  |  |
| 429 | 1.1.1.2.4.3.2 | **Pase Consulta en el Portal** | 10d | 2015-07-22 | 2015-08-04 |  | 29d |  |  | 112h | 112 |  |  |
| 430 | 1.1.1.2.4.3.2.1 | Configuración de Ambiente de Pruebas | 1d | 2015-07-22 | 2015-07-22 | 428 | 29d | 0d | I_AC_DCCSA | 8h | 8 |  |  |
| 431 | 1.1.1.2.4.3.2.2 | **RE_12 CONSULTAS Y REPORTES EER POR WEB** | 3d | 2015-07-23 | 2015-07-27 |  | 29d |  |  | 24h | 24 |  |  |
| 432 | 1.1.1.2.4.3.2.2.1 | Elaboración de casos de prueba | 1d | 2015-07-23 | 2015-07-23 | 430 | 29d | 0d | I_AC_DCCSA | 8h | 8 |  |  |
| 433 | 1.1.1.2.4.3.2.2.2 | Ejecución de casos de prueba | 2d | 2015-07-24 | 2015-07-27 | 432 | 29d | 0d | I_AC_DCCSA | 16h | 16 |  |  |
| 434 | 1.1.1.2.4.3.2.3 | **RE_14 Consulta de DS EER Individuales y/o Consolidadas en el Portal SUNAT** | 4d | 2015-07-28 | 2015-07-31 |  | 29d |  |  | 32h | 32 |  |  |
| 435 | 1.1.1.2.4.3.2.3.1 | Elaboración de casos de prueba | 1d | 2015-07-28 | 2015-07-28 | 433 | 29d | 0d | I_AC_DCCSA | 8h | 8 |  |  |
| 436 | 1.1.1.2.4.3.2.3.2 | Ejecución de casos de prueba | 3d | 2015-07-29 | 2015-07-31 | 435 | 29d | 0d | I_AC_DCCSA | 24h | 24 |  |  |
| 437 | 1.1.1.2.4.3.2.4 | Pruebas de Aceptación (Conformidad normativa) | 2d | 2015-08-03 | 2015-08-04 | 436 | 110d |  | I_AC_DCCSA; INTA | 32h | 32 |  |  |
| 438 | 1.1.1.2.4.3.2.5 | Elaboración de documentos de calidad (Informe de Pruebas) | 2d | 2015-08-03 | 2015-08-04 | 436 | 29d | 0d | I_AC_DCCSA | 16h | 16 |  |  |
| 439 | 1.1.1.2.4.3.3 | **Pase Modulo DS EER Salida** | 6d | 2015-08-05 | 2015-08-12 |  | 29d |  |  | 64h | 64 |  |  |
| 440 | 1.1.1.2.4.3.3.1 | **RE_13 CONSULTAS DE LA DS EER SALIDA CON SOLICITUD DE RECTIFICACIÒN** | 4d | 2015-08-05 | 2015-08-10 |  | 29d |  |  | 32h | 32 |  |  |
| 441 | 1.1.1.2.4.3.3.1.1 | Elaboración de casos de prueba | 1d | 2015-08-05 | 2015-08-05 | 438 | 29d | 0d | I_AC_DCCSA | 8h | 8 |  |  |
| 442 | 1.1.1.2.4.3.3.1.2 | Ejecución de casos de prueba | 3d | 2015-08-06 | 2015-08-10 | 441 | 29d | 0d | I_AC_DCCSA | 24h | 24 |  |  |
| 443 | 1.1.1.2.4.3.3.2 | Pruebas de Aceptación (Conformidad normativa) | 1d | 2015-08-11 | 2015-08-11 | 442 | 105d |  | I_AC_DCCSA; INTA | 16h | 16 |  |  |
| 444 | 1.1.1.2.4.3.3.3 | Elaboración de documentos de calidad (Informe de Pruebas) | 2d | 2015-08-11 | 2015-08-12 | 442 | 29d | 0d | I_AC_DCCSA | 16h | 16 |  |  |
| 445 | 1.1.1.2.4.4 | **Regularización DS con Documentos Digitalizados e Información Complementaria** | 42d | 2015-08-13 | 2015-10-09 |  | 29d |  |  | 384h | 384 | Artículo 35º del DS 011-2009-EF | RIN_REGULARIZACION_POR_TRANSMISION_DSEER_SALIDAVF.docx |
| 446 | 1.1.1.2.4.4.1 | **Pase Teledespacho Regimenes** | 28d | 2015-08-13 | 2015-09-21 |  | 29d |  |  | 248h | 248 |  |  |
| 447 | 1.1.1.2.4.4.1.1 | **RE_15 Regularización Declaración simplificada individual y/o Consolidada EER que cuenten con Partidas Arancelarias contenidas en el Arancel de Aduanas. (Categorías 4d1 y 4d2).** | 10d | 2015-08-13 | 2015-08-26 |  | 29d |  |  | 80h | 80 |  |  |
| 448 | 1.1.1.2.4.4.1.1.1 | Elaboración de casos de prueba | 1d | 2015-08-13 | 2015-08-13 | 444 | 29d | 0d | I_AC_DCCSA | 8h | 8 |  |  |
| 449 | 1.1.1.2.4.4.1.1.2 | Ejecución de casos de prueba | 9d | 2015-08-14 | 2015-08-26 | 448 | 29d | 0d | I_AC_DCCSA | 72h | 72 |  |  |

| ID | WBS | Task | Duration | Start | Finish | Predecessors | Total slack | Free slack | Resources | Work | Cost |
| --- | --- | --- | --- | --- | --- | --- | --- | --- | --- | --- | --- |
| 450 | 1.1.1.2.4.4.1.2 | **RE_16 Recepción de documentos digitalizados mediante el Teledespacho Web que permita la regularización de DSEER que consignan P.A. contenidas en el Arancel de Aduanas para las categorías 4 d1 y 4d2.** | 15d | 2015-08-27 | 2015-09-16 |  | 29d |  |  | 120h | 120 |
| 451 | 1.1.1.2.4.4.1.2.1 | **RE_16_01 Teledespacho Regimenes** | 15d | 2015-08-27 | 2015-09-16 |  | 29d |  |  | 120h | 120 |
| 452 | 1.1.1.2.4.4.1.2.1.1 | Elaboración de casos de prueba (Numeración, Rectificación, Parciales) | 2d | 2015-08-27 | 2015-08-28 | 449 | 29d | 0d | I_AC_DCCSA | 16h | 16 |
| 453 | 1.1.1.2.4.4.1.2.1.2 | Ejecución de casos de prueba (Numeración, Rectificación, Parciales) | 13d | 2015-08-31 | 2015-09-16 | 452 | 29d | 0d | I_AC_DCCSA | 104h | 104 |
| 454 | 1.1.1.2.4.4.1.3 | Pruebas de Aceptación (Conformidad normativa) | 1.5d | 2015-09-17 | 2015-09-18 | 453 | 77.5d |  | I_AC_DCCSA; INTA | 24h | 24 |
| 455 | 1.1.1.2.4.4.1.4 | Elaboración de documentos de calidad (Informe de Pruebas) | 3d | 2015-09-17 | 2015-09-21 | 453 | 29d | 0d | I_AC_DCCSA | 24h | 24 |
| 456 | 1.1.1.2.4.4.2 | **Pase Pl/Sql (Job) ó Scheduler Java** | 3d | 2015-09-22 | 2015-09-24 |  | 29d |  |  | 32h | 32 |
| 457 | 1.1.1.2.4.4.2.1 | **RE_17 Proceso Automático de Deshabilitación de rectificación de los documentos digitalizados.** | 2d | 2015-09-22 | 2015-09-23 |  | 29d |  |  | 16h | 16 |
| 458 | 1.1.1.2.4.4.2.1.1 | Elaboración de casos de prueba | 1d | 2015-09-22 | 2015-09-22 | 455 | 29d | 0d | I_AC_DCCSA | 8h | 8 |
| 459 | 1.1.1.2.4.4.2.1.2 | Ejecución de casos de prueba | 1d | 2015-09-23 | 2015-09-23 | 458 | 29d | 0d | I_AC_DCCSA | 8h | 8 |
| 460 | 1.1.1.2.4.4.2.2 | Pruebas de Aceptación (Conformidad normativa) | 0.5d | 2015-09-24 | 2015-09-24 | 459 | 73.5d |  | I_AC_DCCSA; INTA | 8h | 8 |
| 461 | 1.1.1.2.4.4.2.3 | Elaboración de documentos de calidad (Informe de Pruebas) | 1d | 2015-09-24 | 2015-09-24 | 459 | 29d | 0d | I_AC_DCCSA | 8h | 8 |
| 462 | 1.1.1.2.4.4.3 | **Pase Modulo DS EER Salida** | 5d | 2015-09-25 | 2015-10-01 |  | 29d |  |  | 48h | 48 |
| 463 | 1.1.1.2.4.4.3.1 | **RE_18 Opción de Habilitación /Deshabilitación de rectificación de los documentos digitalizados** | 4d | 2015-09-25 | 2015-09-30 |  | 29d |  |  | 32h | 32 |
| 464 | 1.1.1.2.4.4.3.1.1 | Elaboración de casos de prueba | 1d | 2015-09-25 | 2015-09-25 | 461 | 29d | 0d | I_AC_DCCSA | 8h | 8 |
| 465 | 1.1.1.2.4.4.3.1.2 | Ejecución de casos de prueba | 3d | 2015-09-28 | 2015-09-30 | 464 | 29d | 0d | I_AC_DCCSA | 24h | 24 |
| 466 | 1.1.1.2.4.4.3.2 | Pruebas de Aceptación (Conformidad normativa) | 0.5d | 2015-10-01 | 2015-10-01 | 465 | 68.5d |  | I_AC_DCCSA; INTA | 8h | 8 |
| 467 | 1.1.1.2.4.4.3.3 | Elaboración de documentos de calidad (Informe de Pruebas) | 1d | 2015-10-01 | 2015-10-01 | 465 | 29d | 0d | I_AC_DCCSA | 8h | 8 |
| 468 | 1.1.1.2.4.4.4 | **Pase Consulta WEB** | 6d | 2015-10-02 | 2015-10-09 |  | 29d |  |  | 56h | 56 |
| 469 | 1.1.1.2.4.4.4.1 | Configuración de Ambiente de Pruebas | 1d | 2015-10-02 | 2015-10-02 | 467 | 29d | 0d | I_AC_DCCSA | 8h | 8 |
| 470 | 1.1.1.2.4.4.4.2 | **RE_20 Consulta de Documentos Digitalizados (Modulo Web)** | 4d | 2015-10-05 | 2015-10-08 |  | 29d |  |  | 32h | 32 |
| 471 | 1.1.1.2.4.4.4.2.1 | Elaboración de casos de prueba | 1d | 2015-10-05 | 2015-10-05 | 469 | 29d | 0d | I_AC_DCCSA | 8h | 8 |
| 472 | 1.1.1.2.4.4.4.2.2 | Ejecución de casos de prueba | 3d | 2015-10-06 | 2015-10-08 | 471 | 29d | 0d | I_AC_DCCSA | 24h | 24 |
| 473 | 1.1.1.2.4.4.4.3 | Pruebas de Aceptación (Conformidad normativa) | 0.5d | 2015-10-09 | 2015-10-09 | 472 | 62.5d |  | I_AC_DCCSA; INTA | 8h | 8 |
| 474 | 1.1.1.2.4.4.4.4 | Elaboración de documentos de calidad (Informe de Pruebas) | 1d | 2015-10-09 | 2015-10-09 | 472 | 29d | 0d | I_AC_DCCSA | 8h | 8 |
| 475 | 1.1.1.2.5 | Implantación | 3d | 2015-10-12 | 2015-10-14 | 474 | 29d | 0d |  |  |  |

| ID | WBS | Task | Duration | Start | Finish | Predecessors | Total slack |
| --- | --- | --- | --- | --- | --- | --- | --- |
| 476 | 1.1.1.2.6 | **Estabilización** | 30d | 2015-10-15 | 2015-11-25 |  | 29d |
| 477 | 1.1.1.2.6.1 | Monitoreo y atención de incidencias/problemas | 30d | 2015-10-15 | 2015-11-25 | 475 | 29d |
